# Bid for Facility Extension

Schedule from Primavera P6, 2024-12-09 to 2024-12-18, data date 2024-12-09.
RFQ will not be available prior to 09 December 2024.

## Calendars

- OzBuild 5d/w: Mon-Fri 08:00-16:00; Sat-Sun off.
- OzBuild 6d/w: Mon-Sat 08:00-16:00; Sun off.

## Schedule

| ID | WBS | Activity | Type | Duration | Start | Finish | Total float | Calendar |
| --- | --- | --- | --- | --- | --- | --- | --- | --- |
|  | 1 | **Technical Specification** |  |  | 2024-12-09 | 2024-12-13 |  |  |
| OZ1000 |  | Approval to Bid | milestone | 0d | 2024-12-09 | 2024-12-09 | 8d |  |
| OZ1010 |  | Determine Installation Requirements |  | 4d | 2024-12-09 | 2024-12-12 | 4d |  |
| OZ1020 |  | Create Technical Specification |  | 5d | 2024-12-09 | 2024-12-13 | 3d |  |
| OZ1030 |  | Identify Supplier Components |  | 2d | 2024-12-09 | 2024-12-10 | 6d |  |
| OZ1040 |  | Validate Technical Specification |  | 2d | 2024-12-09 | 2024-12-10 | 6d |  |
|  | 2 | **Delivery Plan** |  |  | 2024-12-09 | 2024-12-18 |  |  |
| OZ1050 |  | Document Delivery Methodology |  | 4d | 2024-12-09 | 2024-12-12 | 4d |  |
| OZ1060 |  | Obtain Quotes from Suppliers |  | 8d | 2024-12-09 | 2024-12-18 | 0d |  |
| OZ1070 |  | Calculate the Bid Estimate |  | 3d | 2024-12-09 | 2024-12-11 | 6d | OzBuild 6d/w |
| OZ1080 |  | Create the Project Schedule |  | 3d | 2024-12-09 | 2024-12-11 | 6d | OzBuild 6d/w |
| OZ1090 |  | Review the Delivery Plan |  | 1d | 2024-12-09 | 2024-12-09 | 7d |  |
|  | 3 | **Bid Document** |  |  | 2024-12-09 | 2024-12-16 |  |  |
| OZ1100 |  | Create Draft of Bid Document |  | 6d | 2024-12-09 | 2024-12-16 | 2d |  |
| OZ1110 |  | Review Bid Document |  | 4d | 2024-12-09 | 2024-12-12 | 4d |  |
| OZ1120 |  | Finalise and Submit Bid Document |  | 2d | 2024-12-09 | 2024-12-10 | 6d |  |
| OZ1130 |  | Bid Document Submitted | milestone | 0d | 2024-12-09 | 2024-12-09 | 8d |  |
| OZ1140 |  | New Activity |  | 5d | 2024-12-09 | 2024-12-13 | 3d |  |

# Bid for Facility Extension

Schedule from Primavera P6, 2024-12-09 to 2025-01-23, data date 2024-12-09.
RFQ will not be available prior to 09 December 2024.

## Calendars

- OzBuild 5d/w: Mon-Fri 08:00-16:00; Sat-Sun off. Exceptions (off unless hours are given): 2024-12-25 to 2024-12-26, 2025-01-01.
- OzBuild 6d/w: Mon-Sat 08:00-16:00; Sun off. Exceptions (off unless hours are given): 2024-12-25 to 2024-12-26, 2025-01-01.

## Schedule

| ID | WBS | Activity | Type | Duration | Start | Finish | Predecessors | Total float | Free float | Calendar |
| --- | --- | --- | --- | --- | --- | --- | --- | --- | --- | --- |
|  | 1 | **Technical Specification** |  |  | 2024-12-09 | 2024-12-27 |  |  |  |  |
| OZ1000 |  | Approval to Bid | milestone | 0d | 2024-12-09 | 2024-12-09 |  | 0d |  |  |
| OZ1010 |  | Determine Installation Requirements |  | 4d | 2024-12-09 | 2024-12-12 | OZ1000 | 0d |  |  |
| OZ1020 |  | Create Technical Specification |  | 5d | 2024-12-13 | 2024-12-19 | OZ1010 | 0d |  |  |
| OZ1030 |  | Identify Supplier Components |  | 2d | 2024-12-20 | 2024-12-23 | OZ1020 | 0d |  |  |
| OZ1040 |  | Validate Technical Specification |  | 2d | 2024-12-24 | 2024-12-27 | OZ1030 | 2d | 0d |  |
|  | 2 | **Delivery Plan** |  |  | 2024-12-24 | 2025-01-15 |  |  |  |  |
| OZ1060 |  | Obtain Quotes from Suppliers |  | 8d | 2024-12-24 | 2025-01-07 | OZ1030 | 0d |  |  |
| OZ1050 |  | Document Delivery Methodology |  | 4d | 2024-12-30 | 2025-01-03 | OZ1040 | 2d | 0d |  |
| OZ1070 |  | Calculate the Bid Estimate |  | 3d | 2025-01-08 | 2025-01-10 | OZ1050, OZ1060 | 0d |  | OzBuild 6d/w |
| OZ1080 |  | Create the Project Schedule |  | 3d | 2025-01-11 | 2025-01-14 | OZ1070 | 0d |  | OzBuild 6d/w |
| OZ1090 |  | Review the Delivery Plan |  | 1d | 2025-01-15 | 2025-01-15 | OZ1080 | 0d |  |  |
|  | 3 | **Bid Document** |  |  | 2025-01-06 | 2025-01-23 |  |  |  |  |
| OZ1100 |  | Create Draft of Bid Document |  | 6d | 2025-01-06 | 2025-01-13 | OZ1050 | 2d |  |  |
| OZ1110 |  | Review Bid Document |  | 4d | 2025-01-16 | 2025-01-21 | OZ1090, OZ1100 | 0d |  |  |
| OZ1120 |  | Finalise and Submit Bid Document |  | 2d | 2025-01-22 | 2025-01-23 | OZ1110 | 0d |  |  |
| OZ1130 |  | Bid Document Submitted | milestone | 0d | 2025-01-23 | 2025-01-23 | OZ1120 | 0d |  |  |

# Bid for Facility Extension

Schedule from Primavera P6, 2024-12-09 to 2025-01-27, data date 2024-12-09.
RFQ will not be available prior to 09 December 2024.

## Calendars

- OzBuild 5d/w: Mon-Fri 08:00-16:00; Sat-Sun off. Exceptions (off unless hours are given): 2024-12-25 to 2024-12-26, 2025-01-01.
- OzBuild 6d/w: Mon-Sat 08:00-16:00; Sun off. Exceptions (off unless hours are given): 2024-12-25 to 2024-12-26, 2025-01-01.

## Schedule

| ID | WBS | Activity | Type | Duration | Start | Finish | Predecessors | Total float | Free float | Constraint | Calendar |
| --- | --- | --- | --- | --- | --- | --- | --- | --- | --- | --- | --- |
|  | 1 | **Technical Specification** |  |  | 2024-12-09 | 2024-12-27 |  |  |  |  |  |
| OZ1000 |  | Approval to Bid | milestone | 0d | 2024-12-09 | 2024-12-09 |  | 4d | 0d |  |  |
| OZ1010 |  | Determine Installation Requirements |  | 4d | 2024-12-09 | 2024-12-12 | OZ1000 | 4d | 0d |  |  |
| OZ1020 |  | Create Technical Specification |  | 5d | 2024-12-13 | 2024-12-19 | OZ1010 | 4d | 0d |  |  |
| OZ1030 |  | Identify Supplier Components |  | 2d | 2024-12-20 | 2024-12-23 | OZ1020 | 4d | 0d |  |  |
| OZ1040 |  | Validate Technical Specification |  | 2d | 2024-12-24 | 2024-12-27 | OZ1030 | 6d | 0d |  |  |
|  | 2 | **Delivery Plan** |  |  | 2024-12-30 | 2025-01-21 |  |  |  |  |  |
| OZ1050 |  | Document Delivery Methodology |  | 4d | 2024-12-30 | 2025-01-03 | OZ1040 | 6d | 0d |  |  |
| OZ1060 |  | Obtain Quotes from Suppliers |  | 8d | 2025-01-02 | 2025-01-13 | OZ1030 | 0d |  | start on or after 2025-01-02 |  |
| OZ1070 |  | Calculate the Bid Estimate |  | 3d | 2025-01-14 | 2025-01-16 | OZ1050, OZ1060 | 0d |  |  | OzBuild 6d/w |
| OZ1080 |  | Create the Project Schedule |  | 3d | 2025-01-17 | 2025-01-20 | OZ1070 | 0d |  |  | OzBuild 6d/w |
| OZ1090 |  | Review the Delivery Plan |  | 1d | 2025-01-21 | 2025-01-21 | OZ1080 | 0d |  |  |  |
|  | 3 | **Bid Document** |  |  | 2025-01-06 | 2025-01-27 |  |  |  |  |  |
| OZ1100 |  | Create Draft of Bid Document |  | 6d | 2025-01-06 | 2025-01-13 | OZ1050 | 6d |  |  |  |
| OZ1110 |  | Review Bid Document |  | 2d | 2025-01-22 | 2025-01-23 | OZ1090, OZ1100 | 0d |  |  |  |
| OZ1120 |  | Finalise and Submit Bid Document |  | 2d | 2025-01-24 | 2025-01-27 | OZ1110 | 0d |  |  |  |
| OZ1130 |  | Bid Document Submitted | milestone | 0d | 2025-01-27 | 2025-01-27 | OZ1120 | 0d |  | finish on or before 2025-01-27 |  |

Notes:
- OZ1060: Constraints: Due to the proximity of Christmas management has requested that the quotes / are obtained after New Year to gain better pricing.
- OZ1130: Constraints: Due to the proximity of Christmas management has requested that the quotes / are obtained after New Year to obtain better prices.

# Bid for Facility Extension

Schedule from Primavera P6, 2024-12-10 to 2025-01-29, data date 2024-12-23, A marks actual dates.
RFQ will not be available prior to 09 December 2024.

## Calendars

- OzBuild 5d/w: Mon-Fri 08:00-16:00; Sat-Sun off. Exceptions (off unless hours are given): 2024-12-25 to 2024-12-26, 2025-01-01.
- OzBuild 6d/w: Mon-Sat 08:00-16:00; Sun off. Exceptions (off unless hours are given): 2024-12-25 to 2024-12-26, 2025-01-01.

## Schedule

| ID | WBS | Activity | Type | Duration | Start | Finish | Predecessors | Complete | Remaining | Planned start | Planned finish | Total float | Free float | Constraint | Calendar |
| --- | --- | --- | --- | --- | --- | --- | --- | --- | --- | --- | --- | --- | --- | --- | --- |
|  | 1 | **Technical Specification** |  |  | 2024-12-10 | 2025-01-09 |  |  |  |  |  |  |  |  |  |
| OZ1000 |  | Approval to Bid | milestone | 0d | 2024-12-10 A | 2024-12-10 A |  | 100% |  | 2024-12-09 | 2024-12-09 |  |  |  |  |
| OZ1010 |  | Determine Installation Requirements |  | 4d | 2024-12-10 A | 2024-12-12 A | OZ1000 | 100% |  | 2024-12-09 | 2024-12-12 |  |  |  |  |
| OZ1020 |  | Create Technical Specification |  | 5d | 2024-12-12 A | 2024-12-20 A | OZ1010 | 100% |  | 2024-12-13 | 2024-12-19 |  |  |  |  |
| OZ1030 |  | Identify Supplier Components |  | 2d | 2024-12-19 A | 2024-12-24 | OZ1020 | 25% | 1.5d | 2024-12-24 | 2024-12-27 | -1.5d | 0d |  |  |
| OZ1040 |  | Validate Technical Specification |  | 2d | 2024-12-20 A | 2025-01-09 | OZ1030 | 10% | 9d | 2024-12-30 | 2024-12-31 | -1.5d | 0d |  |  |
|  | 2 | **Delivery Plan** |  |  | 2025-01-02 | 2025-01-23 |  |  |  |  |  |  |  |  |  |
| OZ1060 |  | Obtain Quotes from Suppliers |  | 8d | 2025-01-02 | 2025-01-13 | OZ1030 |  |  |  |  | 0d | 1.5d | start on or after 2025-01-02 |  |
| OZ1050 |  | Document Delivery Methodology |  | 4d | 2025-01-09 | 2025-01-15 | OZ1040 |  |  |  |  | -1.5d | 0d |  |  |
| OZ1070 |  | Calculate the Bid Estimate |  | 3d | 2025-01-15 | 2025-01-18 | OZ1050, OZ1060 |  |  |  |  | -1.5d | 0d |  | OzBuild 6d/w |
| OZ1080 |  | Create the Project Schedule |  | 3d | 2025-01-18 | 2025-01-22 | OZ1070 |  |  |  |  | -1.5d | 0d |  | OzBuild 6d/w |
| OZ1090 |  | Review the Delivery Plan |  | 1d | 2025-01-22 | 2025-01-23 | OZ1080 |  |  |  |  | -1.5d | 0d |  |  |
|  | 3 | **Bid Document** |  |  | 2025-01-15 | 2025-01-29 |  |  |  |  |  |  |  |  |  |
| OZ1100 |  | Create Draft of Bid Document |  | 6d | 2025-01-15 | 2025-01-23 | OZ1050 |  |  |  |  | -1.5d | 0d |  |  |
| OZ1110 |  | Review Bid Document |  | 2d | 2025-01-23 | 2025-01-27 | OZ1090, OZ1100 |  |  |  |  | -1.5d | 0d |  |  |
| OZ1120 |  | Finalise and Submit Bid Document |  | 2d | 2025-01-27 | 2025-01-29 | OZ1110 |  |  |  |  | -1.5d | 0d |  |  |
| OZ1130 |  | Bid Document Submitted | milestone | 0d | 2025-01-29 | 2025-01-29 | OZ1120 |  |  |  |  | -1.5d | 0d | finish on or before 2025-01-27 |  |

Notes:
- OZ1060: Constraints: Due to the proximity of Christmas management has requested that the quotes / are obtained after New Year to gain better pricing.

# Bid for Facility Extension

Schedule from Primavera P6, 2024-12-09 to 2025-01-30, data date 2024-12-09, costs in AUD.
RFQ will not be available prior to 09 December 2024.

## Calendars

- OzBuild 5d/w: Mon-Fri 08:00-16:00; Sat-Sun off. Exceptions (off unless hours are given): 2024-12-25 to 2024-12-26, 2025-01-01.
- OzBuild 6d/w: Mon-Sat 08:00-16:00; Sun off. Exceptions (off unless hours are given): 2024-12-25 to 2024-12-26, 2025-01-01.

## Resources

| Resource | Group | Unit | Rate |
| --- | --- | --- | --- |
| Project Manager | labor |  | 120 |
| System Engineer | labor |  | 90 |
| Purchasing Officer | labor |  | 70 |
| Project Support | labor |  | 80 |
| Clerical Support | labor |  | 50 |
| Report Binding | material | ea | 100 |

## Schedule

| ID | WBS | Activity | Type | Duration | Start | Finish | Predecessors | Total float | Free float | Constraint | Calendar | Resources | Cost |
| --- | --- | --- | --- | --- | --- | --- | --- | --- | --- | --- | --- | --- | --- |
|  | 1 | **Technical Specification** |  |  | 2024-12-09 | 2024-12-27 |  |  |  |  |  |  |  |
| OZ1000 |  | Approval to Bid | milestone | 0d | 2024-12-09 | 2024-12-09 |  | -3d | 0d |  |  |  |  |
| OZ1010 |  | Determine Installation Requirements |  | 4d | 2024-12-09 | 2024-12-12 | OZ1000 | -3d | 0d |  |  | Project Manager [32 h]; System Engineer [32 h] | 6,720 |
| OZ1020 |  | Create Technical Specification |  | 5d | 2024-12-13 | 2024-12-19 | OZ1010 | -3d | 0d |  |  | System Engineer [40 h] | 8,600 |
| OZ1030 |  | Identify Supplier Components |  | 2d | 2024-12-20 | 2024-12-23 | OZ1020 | -3d | 0d |  |  | Purchasing Officer [16 h] | 1,120 |
| OZ1040 |  | Validate Technical Specification |  | 2d | 2024-12-24 | 2024-12-27 | OZ1030 | -3d | 0d |  |  | Project Manager [16 h]; System Engineer [16 h] | 3,360 |
|  | 2 | **Delivery Plan** |  |  | 2024-12-30 | 2025-01-24 |  |  |  |  |  |  |  |
| OZ1050 |  | Document Delivery Methodology |  | 4d | 2024-12-30 | 2025-01-03 | OZ1040 | -3d | 8d |  |  | Project Manager [32 h] | 3,840 |
| OZ1060 |  | Obtain Quotes from Suppliers |  | 8d | 2025-01-06 | 2025-01-15 | OZ1030 | -3d | 0d | start on or after 2025-01-02 |  | Purchasing Officer [64 h]; Project Manager [64 h] | 12,160 |
| OZ1070 |  | Calculate the Bid Estimate |  | 3d | 2025-01-16 | 2025-01-18 | OZ1050, OZ1060 | -2d | 0d |  | OzBuild 6d/w | Project Support [24 h] | 1,920 |
| OZ1080 |  | Create the Project Schedule |  | 3d | 2025-01-20 | 2025-01-22 | OZ1070 | -2d | 1d |  | OzBuild 6d/w | Project Support [24 h] | 1,920 |
| OZ1090 |  | Review the Delivery Plan |  | 1d | 2025-01-24 | 2025-01-24 | OZ1080 | -3d | 0d |  |  | System Engineer [8 h]; Project Manager [8 h] | 1,680 |
|  | 3 | **Bid Document** |  |  | 2025-01-16 | 2025-01-30 |  |  |  |  |  |  |  |
| OZ1100 |  | Create Draft of Bid Document |  | 6d | 2025-01-16 | 2025-01-23 | OZ1050 | -3d | 1d |  |  | Clerical Support [48 h]; Project Manager [48 h] | 8,160 |
| OZ1110 |  | Review Bid Document |  | 2d | 2025-01-27 | 2025-01-28 | OZ1090, OZ1100 | -3d | 0d |  |  | System Engineer [16 h]; Project Manager [16 h] | 3,360 |
| OZ1120 |  | Finalise and Submit Bid Document |  | 2d | 2025-01-29 | 2025-01-30 | OZ1110 | -3d | 0d |  |  | Report Binding [3 ea]; Project Manager [16 h] | 2,220 |
| OZ1130 |  | Bid Document Submitted | milestone | 0d | 2025-01-30 | 2025-01-30 | OZ1120 | -3d | 0d | finish on or before 2025-01-27 |  |  |  |

Notes:
- OZ1020: Expenses: Specialists Consultant 5000
- OZ1060: Constraints: Due to the proximity of Christmas management has requested that the quotes / are obtained after New Year to gain better pricing.

# Bid for Facility Extension

Schedule from Primavera P6, 2024-12-09 to 2025-01-27, data date 2024-12-09.
RFQ will not be available prior to 09 December 2024.

## Calendars

- OzBuild 5d/w: Mon-Fri 08:00-16:00; Sat-Sun off. Exceptions (off unless hours are given): 2024-12-25 to 2024-12-26, 2025-01-01.
- OzBuild 6d/w: Mon-Sat 08:00-16:00; Sun off. Exceptions (off unless hours are given): 2024-12-25 to 2024-12-26, 2025-01-01.

## Schedule

| ID | WBS | Activity | Type | Duration | Start | Finish | Predecessors | Total float | Free float | Constraint | Calendar |
| --- | --- | --- | --- | --- | --- | --- | --- | --- | --- | --- | --- |
|  | 1 | **Technical Specification** |  |  | 2024-12-09 | 2024-12-27 |  |  |  |  |  |
| OZ1000 |  | Approval to Bid | milestone | 0d | 2024-12-09 | 2024-12-09 |  | 4d | 0d |  |  |
| OZ1010 |  | Determine Installation Requirements |  | 4d | 2024-12-09 | 2024-12-12 | OZ1000 | 4d | 0d |  |  |
| OZ1020 |  | Create Technical Specification |  | 5d | 2024-12-13 | 2024-12-19 | OZ1010 | 4d | 0d |  |  |
| OZ1030 |  | Identify Supplier Components |  | 2d | 2024-12-20 | 2024-12-23 | OZ1020 | 4d | 0d |  |  |
| OZ1040 |  | Validate Technical Specification |  | 2d | 2024-12-24 | 2024-12-27 | OZ1030 | 6d | 0d |  |  |
|  | 2 | **Delivery Plan** |  |  | 2024-12-30 | 2025-01-21 |  |  |  |  |  |
| OZ1050 |  | Document Delivery Methodology |  | 4d | 2024-12-30 | 2025-01-03 | OZ1040 | 6d | 0d |  |  |
| OZ1060 |  | Obtain Quotes from Suppliers |  | 8d | 2025-01-02 | 2025-01-13 | OZ1030 | 0d |  | start on or after 2025-01-02 |  |
| OZ1070 |  | Calculate the Bid Estimate |  | 3d | 2025-01-14 | 2025-01-16 | OZ1050, OZ1060 | 0d |  |  | OzBuild 6d/w |
| OZ1080 |  | Create the Project Schedule |  | 3d | 2025-01-17 | 2025-01-20 | OZ1070 | 0d |  |  | OzBuild 6d/w |
| OZ1090 |  | Review the Delivery Plan |  | 1d | 2025-01-21 | 2025-01-21 | OZ1080 | 0d |  |  |  |
|  | 3 | **Bid Document** |  |  | 2025-01-06 | 2025-01-27 |  |  |  |  |  |
| OZ1100 |  | Create Draft of Bid Document |  | 6d | 2025-01-06 | 2025-01-13 | OZ1050 | 6d |  |  |  |
| OZ1110 |  | Review Bid Document |  | 2d | 2025-01-22 | 2025-01-23 | OZ1090, OZ1100 | 0d |  |  |  |
| OZ1120 |  | Finalise and Submit Bid Document |  | 2d | 2025-01-24 | 2025-01-27 | OZ1110 | 0d |  |  |  |
| OZ1130 |  | Bid Document Submitted | milestone | 0d | 2025-01-27 | 2025-01-27 | OZ1120 | 0d |  | finish on or before 2025-01-27 |  |

Notes:
- OZ1060: Constraints: Due to the proximity of Christmas management has requested that the quotes / are obtained after New Year to gain better pricing.
- OZ1130: Constraints: Due to the proximity of Christmas management has requested that the quotes / are obtained after New Year to obtain better prices.

# Bid for Facility Extension

Schedule from Primavera P6, 2024-12-10 to 2025-01-27, data date 2024-12-16, costs in AUD, A marks actual dates.
RFQ will not be available prior to 09 December 2024.

## Calendars

- OzBuild 5d/w: Mon-Fri 08:00-16:00; Sat-Sun off. Exceptions (off unless hours are given): 2024-12-25 to 2024-12-26, 2025-01-01.
- OzBuild 6d/w: Mon-Sat 08:00-16:00; Sun off. Exceptions (off unless hours are given): 2024-12-25 to 2024-12-26, 2025-01-01.

## Resources

| Resource | Group | Unit | Rate |
| --- | --- | --- | --- |
| Project Manager | labor |  | 120 |
| System Engineer | labor |  | 90 |
| Purchasing Officer | labor |  | 70 |
| Project Support | labor |  | 80 |
| Clerical Support | labor |  | 50 |
| Report Binding | material | ea | 100 |

## Schedule

| ID | WBS | Activity | Type | Duration | Start | Finish | Predecessors | Complete | Remaining | Planned start | Planned finish | Total float | Free float | Constraint | Calendar | Resources | Cost | Actual cost |
| --- | --- | --- | --- | --- | --- | --- | --- | --- | --- | --- | --- | --- | --- | --- | --- | --- | --- | --- |
|  | 1 | **Technical Specification** |  |  | 2024-12-10 | 2024-12-23 |  |  |  |  |  |  |  |  |  |  |  |  |
| OZ1000 |  | Approval to Bid | milestone | 0d | 2024-12-10 A | 2024-12-10 A |  | 100% |  | 2024-12-09 | 2024-12-09 |  |  |  |  |  |  |  |
| OZ1010 |  | Determine Installation Requirements |  | 4d | 2024-12-10 A | 2024-12-12 A | OZ1000 | 100% |  | 2024-12-09 | 2024-12-12 |  |  |  |  | Project Manager [32 h]; System Engineer [32 h] | 6,720 | 6,720 |
| OZ1020 |  | Create Technical Specification |  | 5d | 2024-12-12 A | 2024-12-17 | OZ1010 | 40% | 2d | 2024-12-13 | 2024-12-19 | 6d | 0d |  |  | System Engineer [40 h]; Project Manager [40 h] | 13,400 | 4,520 |
| OZ1030 |  | Identify Supplier Components |  | 2d | 2024-12-18 | 2024-12-19 | OZ1020 |  |  |  |  | 6d | 0d |  |  | Purchasing Officer [16 h] | 1,120 |  |
| OZ1040 |  | Validate Technical Specification |  | 2d | 2024-12-20 | 2024-12-23 | OZ1030 |  |  |  |  | 8d | 0d |  |  | Project Manager [16 h]; System Engineer [16 h] | 3,360 |  |
|  | 2 | **Delivery Plan** |  |  | 2024-12-24 | 2025-01-21 |  |  |  |  |  |  |  |  |  |  |  |  |
| OZ1050 |  | Document Delivery Methodology |  | 4d | 2024-12-24 | 2024-12-31 | OZ1040 |  |  |  |  | 8d | 0d |  |  | Project Manager [32 h] | 3,840 |  |
| OZ1060 |  | Obtain Quotes from Suppliers |  | 8d | 2025-01-02 | 2025-01-13 | OZ1030 |  |  |  |  | 0d |  | start on or after 2025-01-02 |  | Purchasing Officer [64 h]; Project Manager [64 h] | 12,160 |  |
| OZ1070 |  | Calculate the Bid Estimate |  | 3d | 2025-01-14 | 2025-01-16 | OZ1050, OZ1060 |  |  |  |  | 0d |  |  | OzBuild 6d/w | Project Support [24 h] | 1,920 |  |
| OZ1080 |  | Create the Project Schedule |  | 3d | 2025-01-17 | 2025-01-20 | OZ1070 |  |  |  |  | 0d |  |  | OzBuild 6d/w | Project Support [24 h] | 1,920 |  |
| OZ1090 |  | Review the Delivery Plan |  | 1d | 2025-01-21 | 2025-01-21 | OZ1080 |  |  |  |  | 0d |  |  |  | System Engineer [8 h]; Project Manager [8 h] | 1,680 |  |
|  | 3 | **Bid Document** |  |  | 2025-01-02 | 2025-01-27 |  |  |  |  |  |  |  |  |  |  |  |  |
| OZ1100 |  | Create Draft of Bid Document |  | 6d | 2025-01-02 | 2025-01-09 | OZ1050 |  |  |  |  | 8d |  |  |  | Clerical Support [48 h]; Project Manager [48 h] | 8,160 |  |
| OZ1110 |  | Review Bid Document |  | 2d | 2025-01-22 | 2025-01-23 | OZ1090, OZ1100 |  |  |  |  | 0d |  |  |  | System Engineer [16 h]; Project Manager [16 h] | 3,360 |  |
| OZ1120 |  | Finalise and Submit Bid Document |  | 2d | 2025-01-24 | 2025-01-27 | OZ1110 |  |  |  |  | 0d |  |  |  | Report Binding [3 ea]; Project Manager [16 h] | 2,220 |  |
| OZ1130 |  | Bid Document Submitted | milestone | 0d | 2025-01-27 | 2025-01-27 | OZ1120 |  |  |  |  | 0d |  | finish on or before 2025-01-27 |  |  |  |  |

Notes:
- OZ1020: Expenses: Specialists Consultant 5000
- OZ1060: Constraints: Due to the proximity of Christmas management has requested that the quotes / are obtained after New Year to gain better pricing.

# Bid for Facility Extension

Schedule from Primavera P6, 2024-12-10 to 2025-01-27, data date 2024-12-16, costs in AUD, A marks actual dates.
RFQ will not be available prior to 09 December 2024.

## Calendars

- OzBuild 5d/w: Mon-Fri 08:00-16:00; Sat-Sun off. Exceptions (off unless hours are given): 2024-12-25 to 2024-12-26, 2025-01-01.
- OzBuild 6d/w: Mon-Sat 08:00-16:00; Sun off. Exceptions (off unless hours are given): 2024-12-25 to 2024-12-26, 2025-01-01.

## Resources

| Resource | Group | Unit | Rate |
| --- | --- | --- | --- |
| Project Manager | labor |  | 120 |
| System Engineer | labor |  | 90 |
| Purchasing Officer | labor |  | 70 |
| Project Support | labor |  | 80 |
| Clerical Support | labor |  | 50 |
| Report Binding | material | ea | 100 |

## Schedule

| ID | WBS | Activity | Type | Duration | Start | Finish | Predecessors | Complete | Remaining | Planned start | Planned finish | Total float | Free float | Constraint | Calendar | Resources | Cost | Actual cost | OzBuild Department |
| --- | --- | --- | --- | --- | --- | --- | --- | --- | --- | --- | --- | --- | --- | --- | --- | --- | --- | --- | --- |
|  | 1 | **Technical Specification** |  |  | 2024-12-10 | 2024-12-23 |  |  |  |  |  |  |  |  |  |  |  |  |  |
| OZ1000 |  | Approval to Bid | milestone | 0d | 2024-12-10 A | 2024-12-10 A |  | 100% |  | 2024-12-09 | 2024-12-09 |  |  |  |  |  |  |  | OZD |
| OZ1010 |  | Determine Installation Requirements |  | 4d | 2024-12-10 A | 2024-12-12 A | OZ1000 | 100% |  | 2024-12-09 | 2024-12-12 |  |  |  |  | Project Manager [32 h]; System Engineer [32 h] | 6,720 | 6,720 | EN |
| OZ1020 |  | Create Technical Specification |  | 5d | 2024-12-12 A | 2024-12-17 | OZ1010 | 40% | 2d | 2024-12-13 | 2024-12-19 | 6d | 0d |  |  | System Engineer [40 h]; Project Manager [40 h] | 13,400 | 7,040 | EN |
| OZ1030 |  | Identify Supplier Components |  | 2d | 2024-12-18 | 2024-12-19 | OZ1020 |  |  |  |  | 6d | 0d |  |  | Purchasing Officer [16 h] | 1,120 |  | PR |
| OZ1040 |  | Validate Technical Specification |  | 2d | 2024-12-20 | 2024-12-23 | OZ1030 |  |  |  |  | 8d | 0d |  |  | Project Manager [16 h]; System Engineer [16 h] | 3,360 |  | PS |
|  | 2 | **Delivery Plan** |  |  | 2024-12-24 | 2025-01-21 |  |  |  |  |  |  |  |  |  |  |  |  |  |
| OZ1050 |  | Document Delivery Methodology |  | 4d | 2024-12-24 | 2024-12-31 | OZ1040 |  |  |  |  | 8d | 0d |  |  | Project Manager [32 h] | 3,840 |  | EN |
| OZ1060 |  | Obtain Quotes from Suppliers |  | 8d | 2025-01-02 | 2025-01-13 | OZ1030 |  |  |  |  | 0d |  | start on or after 2025-01-02 |  | Purchasing Officer [64 h]; Project Manager [64 h] | 12,160 |  | PR |
| OZ1070 |  | Calculate the Bid Estimate |  | 3d | 2025-01-14 | 2025-01-16 | OZ1050, OZ1060 |  |  |  |  | 0d |  |  | OzBuild 6d/w | Project Support [24 h] | 1,920 |  | PR |
| OZ1080 |  | Create the Project Schedule |  | 3d | 2025-01-17 | 2025-01-20 | OZ1070 |  |  |  |  | 0d |  |  | OzBuild 6d/w | Project Support [24 h] | 1,920 |  | PS |
| OZ1090 |  | Review the Delivery Plan |  | 1d | 2025-01-21 | 2025-01-21 | OZ1080 |  |  |  |  | 0d |  |  |  | System Engineer [8 h]; Project Manager [8 h] | 1,680 |  | PS |
|  | 3 | **Bid Document** |  |  | 2025-01-02 | 2025-01-27 |  |  |  |  |  |  |  |  |  |  |  |  |  |
| OZ1100 |  | Create Draft of Bid Document |  | 6d | 2025-01-02 | 2025-01-09 | OZ1050 |  |  |  |  | 8d |  |  |  | Clerical Support [48 h]; Project Manager [48 h] | 8,160 |  | PS |
| OZ1110 |  | Review Bid Document |  | 2d | 2025-01-22 | 2025-01-23 | OZ1090, OZ1100 |  |  |  |  | 0d |  |  |  | System Engineer [16 h]; Project Manager [16 h] | 3,360 |  | PS |
| OZ1120 |  | Finalise and Submit Bid Document |  | 2d | 2025-01-24 | 2025-01-27 | OZ1110 |  |  |  |  | 0d |  |  |  | Report Binding [3 ea]; Project Manager [16 h] | 2,220 |  | PS |
| OZ1130 |  | Bid Document Submitted | milestone | 0d | 2025-01-27 | 2025-01-27 | OZ1120 |  |  |  |  | 0d |  | finish on or before 2025-01-27 |  |  |  |  | OZD |

Notes:
- OZ1020: Expenses: Specialists Consultant 5000
- OZ1060: Constraints: Due to the proximity of Christmas management has requested that the quotes / are obtained after New Year to gain better pricing.

## Activity codes

| Code | Value | Meaning |
| --- | --- | --- |
| OzBuild Department | EN | Engineering |
| OzBuild Department | OZD | OzBuild Department |
| OzBuild Department | PR | Procurement |
| OzBuild Department | PS | Project Support |

# Bid for Facility Extension

Schedule from Primavera P6, 2024-12-10 to 2025-02-14, data date 2024-12-16, costs in AUD, A marks actual dates.
RFQ will not be available prior to 09 December 2024.

## Calendars

- OzBuild 5d/w: Mon-Fri 08:00-16:00; Sat-Sun off. Exceptions (off unless hours are given): 2024-12-25 to 2024-12-26, 2025-01-01.
- OzBuild 6d/w: Mon-Sat 08:00-16:00; Sun off. Exceptions (off unless hours are given): 2024-12-25 to 2024-12-26, 2025-01-01.

## Resources

| Resource | Group | Unit | Rate |
| --- | --- | --- | --- |
| Project Manager | labor |  | 120 |
| System Engineer | labor |  | 90 |
| Purchasing Officer | labor |  | 70 |
| Project Support | labor |  | 80 |
| Clerical Support | labor |  | 50 |
| Report Binding | material | ea | 100 |

## Schedule

| ID | WBS | Activity | Type | Duration | Start | Finish | Predecessors | Complete | Remaining | Planned start | Planned finish | Total float | Free float | Constraint | Calendar | Resources | Cost | Actual cost | OzBuild Department |
| --- | --- | --- | --- | --- | --- | --- | --- | --- | --- | --- | --- | --- | --- | --- | --- | --- | --- | --- | --- |
|  | 1 | **Technical Specification** |  |  | 2024-12-10 | 2024-12-23 |  |  |  |  |  |  |  |  |  |  |  |  |  |
| OZ1000 |  | Approval to Bid | milestone | 0d | 2024-12-10 A | 2024-12-10 A |  | 100% |  | 2024-12-09 | 2024-12-09 |  |  |  |  |  |  |  | OZD |
| OZ1010 |  | Determine Installation Requirements |  | 4d | 2024-12-10 A | 2024-12-12 A | OZ1000 | 100% |  | 2024-12-09 | 2024-12-12 |  |  |  |  | Project Manager [32 h]; System Engineer [32 h] | 6,720 | 6,720 | EN |
| OZ1020 |  | Create Technical Specification |  | 5d | 2024-12-12 A | 2024-12-17 | OZ1010 | 40% | 2d | 2024-12-13 | 2024-12-19 | -8d | 0d |  |  | System Engineer [40 h]; Project Manager [40 h] | 13,400 | 4,520 | EN |
| OZ1030 |  | Identify Supplier Components |  | 2d | 2024-12-18 | 2024-12-19 | OZ1020 |  |  |  |  | -8d | 0d |  |  | Purchasing Officer [16 h] | 1,120 |  | PR |
| OZ1040 |  | Validate Technical Specification |  | 2d | 2024-12-20 | 2024-12-23 | OZ1030 |  |  |  |  | -2d | 0d |  |  | Project Manager [16 h]; System Engineer [16 h] | 3,360 |  | PS |
|  | 2 | **Delivery Plan** |  |  | 2024-12-24 | 2025-02-10 |  |  |  |  |  |  |  |  |  |  |  |  |  |
| OZ1050 |  | Document Delivery Methodology |  | 8d | 2024-12-24 | 2025-01-07 | OZ1040 |  |  |  |  | -2d | 0d |  |  | Project Manager [32 h] | 3,840 |  | EN |
| OZ1060 |  | Obtain Quotes from Suppliers |  | 16d | 2025-01-02 | 2025-01-23 | OZ1030 |  |  |  |  | -14d | 0d | start on or after 2025-01-02 |  | Purchasing Officer [64 h]; Project Manager [64 h] | 12,160 |  | PR |
| OZ1070 |  | Calculate the Bid Estimate |  | 6d | 2025-01-24 | 2025-01-30 | OZ1050, OZ1060 |  |  |  |  | -16d | 0d |  | OzBuild 6d/w | Project Support [24 h] | 1,920 |  | PR |
| OZ1080 |  | Create the Project Schedule |  | 6d | 2025-01-31 | 2025-02-06 | OZ1070 |  |  |  |  | -16d | 0d |  | OzBuild 6d/w | Project Support [24 h] | 1,920 |  | PS |
| OZ1090 |  | Review the Delivery Plan |  | 2d | 2025-02-07 | 2025-02-10 | OZ1080 |  |  |  |  | -14d | 0d |  |  | System Engineer [8 h]; Project Manager [8 h] | 1,680 |  | PS |
|  | 3 | **Bid Document** |  |  | 2025-01-08 | 2025-02-14 |  |  |  |  |  |  |  |  |  |  |  |  |  |
| OZ1100 |  | Create Draft of Bid Document |  | 6d | 2025-01-08 | 2025-01-15 | OZ1050 |  |  |  |  | 4d | 18d |  |  | Clerical Support [48 h]; Project Manager [48 h] | 8,160 |  | PS |
| OZ1110 |  | Review Bid Document |  | 2d | 2025-02-11 | 2025-02-12 | OZ1090, OZ1100 |  |  |  |  | -14d | 0d |  |  | System Engineer [16 h]; Project Manager [16 h] | 3,360 |  | PS |
| OZ1120 |  | Finalise and Submit Bid Document |  | 2d | 2025-02-13 | 2025-02-14 | OZ1110 |  |  |  |  | -14d | 0d |  |  | Report Binding [3 ea]; Project Manager [16 h] | 2,220 |  | PS |
| OZ1130 |  | Bid Document Submitted | milestone | 0d | 2025-02-14 | 2025-02-14 | OZ1120 |  |  |  |  | -14d | 0d | finish on or before 2025-01-27 |  |  |  |  | OZD |

Notes:
- OZ1020: Expenses: Specialists Consultant 5000
- OZ1060: Constraints: Due to the proximity of Christmas management has requested that the quotes / are obtained after New Year to gain better pricing.

## Activity codes

| Code | Value | Meaning |
| --- | --- | --- |
| OzBuild Department | EN | Engineering |
| OzBuild Department | OZD | OzBuild Department |
| OzBuild Department | PR | Procurement |
| OzBuild Department | PS | Project Support |

# Bid for Facility Extension

Schedule from Primavera P6, 2024-12-10 to 2025-01-27, data date 2024-12-16, A marks actual dates.
RFQ will not be available prior to 09 December 2024.

## Calendars

- OzBuild 5d/w: Mon-Fri 08:00-16:00; Sat-Sun off. Exceptions (off unless hours are given): 2024-12-25 to 2024-12-26, 2025-01-01.
- OzBuild 6d/w: Mon-Sat 08:00-16:00; Sun off. Exceptions (off unless hours are given): 2024-12-25 to 2024-12-26, 2025-01-01.

## Schedule

| ID | WBS | Activity | Type | Duration | Start | Finish | Predecessors | Complete | Remaining | Planned start | Planned finish | Total float | Free float | Constraint | Calendar |
| --- | --- | --- | --- | --- | --- | --- | --- | --- | --- | --- | --- | --- | --- | --- | --- |
|  | 1 | **Technical Specification** |  |  | 2024-12-10 | 2024-12-31 |  |  |  |  |  |  |  |  |  |
| OZ1000 |  | Approval to Bid | milestone | 0d | 2024-12-10 A | 2024-12-10 A |  | 100% |  | 2024-12-09 | 2024-12-09 |  |  |  |  |
| OZ1010 |  | Determine Installation Requirements |  | 4d | 2024-12-10 A | 2024-12-12 A | OZ1000 | 100% |  | 2024-12-09 | 2024-12-12 |  |  |  |  |
| OZ1020 |  | Create Technical Specification |  | 5d | 2024-12-12 A | 2024-12-23 | OZ1010 | 60% | 6d | 2024-12-13 | 2024-12-19 | 2d | 0d |  |  |
| OZ1030 |  | Identify Supplier Components |  | 2d | 2024-12-24 | 2024-12-27 | OZ1020 |  |  |  |  | 2d | 0d |  |  |
| OZ1040 |  | Validate Technical Specification |  | 2d | 2024-12-30 | 2024-12-31 | OZ1030 |  |  |  |  | 4d | 0d |  |  |
|  | 2 | **Delivery Plan** |  |  | 2025-01-02 | 2025-01-21 |  |  |  |  |  |  |  |  |  |
| OZ1050 |  | Document Delivery Methodology |  | 4d | 2025-01-02 | 2025-01-07 | OZ1040 |  |  |  |  | 4d | 0d |  |  |
| OZ1060 |  | Obtain Quotes from Suppliers |  | 8d | 2025-01-02 | 2025-01-13 | OZ1030 |  |  |  |  | 0d |  | start on or after 2025-01-02 |  |
| OZ1070 |  | Calculate the Bid Estimate |  | 3d | 2025-01-14 | 2025-01-16 | OZ1050, OZ1060 |  |  |  |  | 0d |  |  | OzBuild 6d/w |
| OZ1080 |  | Create the Project Schedule |  | 3d | 2025-01-17 | 2025-01-20 | OZ1070 |  |  |  |  | 0d |  |  | OzBuild 6d/w |
| OZ1090 |  | Review the Delivery Plan |  | 1d | 2025-01-21 | 2025-01-21 | OZ1080 |  |  |  |  | 0d |  |  |  |
|  | 3 | **Bid Document** |  |  | 2025-01-08 | 2025-01-27 |  |  |  |  |  |  |  |  |  |
| OZ1100 |  | Create Draft of Bid Document |  | 6d | 2025-01-08 | 2025-01-15 | OZ1050 |  |  |  |  | 4d |  |  |  |
| OZ1110 |  | Review Bid Document |  | 2d | 2025-01-22 | 2025-01-23 | OZ1090, OZ1100 |  |  |  |  | 0d |  |  |  |
| OZ1120 |  | Finalise and Submit Bid Document |  | 2d | 2025-01-24 | 2025-01-27 | OZ1110 |  |  |  |  | 0d |  |  |  |
| OZ1130 |  | Bid Document Submitted | milestone | 0d | 2025-01-27 | 2025-01-27 | OZ1120 |  |  |  |  | 0d |  | finish on or before 2025-01-27 |  |

Notes:
- OZ1060: Constraints: Due to the proximity of Christmas management has requested that the quotes / are obtained after New Year to gain better pricing.
- OZ1130: Constraints: Due to the proximity of Christmas management has requested that the quotes / are obtained after New Year to obtain better prices.

# Bid for Facility Extension

Schedule from Primavera P6, 2024-12-10 to 2025-01-27, data date 2024-12-23, A marks actual dates.
RFQ will not be available prior to 09 December 2024.

## Calendars

- OzBuild 5d/w: Mon-Fri 08:00-16:00; Sat-Sun off. Exceptions (off unless hours are given): 2024-12-25 to 2024-12-26, 2025-01-01.
- OzBuild 6d/w: Mon-Sat 08:00-16:00; Sun off. Exceptions (off unless hours are given): 2024-12-25 to 2024-12-26, 2025-01-01.

## Schedule

| ID | WBS | Activity | Type | Duration | Start | Finish | Predecessors | Complete | Remaining | Planned start | Planned finish | Total float | Constraint | Calendar |
| --- | --- | --- | --- | --- | --- | --- | --- | --- | --- | --- | --- | --- | --- | --- |
|  | 1 | **Technical Specification** |  |  | 2024-12-10 | 2025-01-07 |  |  |  |  |  |  |  |  |
| OZ1000 |  | Approval to Bid | milestone | 0d | 2024-12-10 A | 2024-12-10 A |  | 100% |  | 2024-12-09 | 2024-12-09 |  |  |  |
| OZ1010 |  | Determine Installation Requirements |  | 4d | 2024-12-10 A | 2024-12-12 A | OZ1000 | 100% |  | 2024-12-09 | 2024-12-12 |  |  |  |
| OZ1020 |  | Create Technical Specification |  | 5d | 2024-12-12 A | 2024-12-20 A | OZ1010 | 100% |  | 2024-12-13 | 2024-12-19 |  |  |  |
| OZ1030 |  | Identify Supplier Components |  | 2d | 2024-12-19 A | 2024-12-24 | OZ1020 | 50% | 2d | 2024-12-24 | 2024-12-27 | 3d |  |  |
| OZ1040 |  | Validate Technical Specification |  | 2d | 2024-12-20 A | 2025-01-07 | OZ1030 | 10% | 9d | 2024-12-30 | 2024-12-31 | 0d |  |  |
|  | 2 | **Delivery Plan** |  |  | 2025-01-02 | 2025-01-21 |  |  |  |  |  |  |  |  |
| OZ1060 |  | Obtain Quotes from Suppliers |  | 8d | 2025-01-02 | 2025-01-13 | OZ1030 |  |  |  |  | 0d | start on or after 2025-01-02 |  |
| OZ1050 |  | Document Delivery Methodology |  | 4d | 2025-01-08 | 2025-01-13 | OZ1040 |  |  |  |  | 0d |  |  |
| OZ1070 |  | Calculate the Bid Estimate |  | 3d | 2025-01-14 | 2025-01-16 | OZ1050, OZ1060 |  |  |  |  | 0d |  | OzBuild 6d/w |
| OZ1080 |  | Create the Project Schedule |  | 3d | 2025-01-17 | 2025-01-20 | OZ1070 |  |  |  |  | 0d |  | OzBuild 6d/w |
| OZ1090 |  | Review the Delivery Plan |  | 1d | 2025-01-21 | 2025-01-21 | OZ1080 |  |  |  |  | 0d |  |  |
|  | 3 | **Bid Document** |  |  | 2025-01-14 | 2025-01-27 |  |  |  |  |  |  |  |  |
| OZ1100 |  | Create Draft of Bid Document |  | 6d | 2025-01-14 | 2025-01-21 | OZ1050 |  |  |  |  | 0d |  |  |
| OZ1110 |  | Review Bid Document |  | 2d | 2025-01-22 | 2025-01-23 | OZ1090, OZ1100 |  |  |  |  | 0d |  |  |
| OZ1120 |  | Finalise and Submit Bid Document |  | 2d | 2025-01-24 | 2025-01-27 | OZ1110 |  |  |  |  | 0d |  |  |
| OZ1130 |  | Bid Document Submitted | milestone | 0d | 2025-01-27 | 2025-01-27 | OZ1120 |  |  |  |  | 0d | finish on or before 2025-01-27 |  |

Notes:
- OZ1060: Constraints: Due to the proximity of Christmas management has requested that the quotes / are obtained after New Year to gain better pricing.
- OZ1130: Constraints: Due to the proximity of Christmas management has requested that the quotes / are obtained after New Year to obtain better prices.

# Bid for Facility Extension

Schedule from Primavera P6, 2024-12-10 to 2025-01-29, data date 2024-12-23, A marks actual dates.
RFQ will not be available prior to 09 December 2024.

## Calendars

- OzBuild 5d/w: Mon-Fri 08:00-16:00; Sat-Sun off. Exceptions (off unless hours are given): 2024-12-25 to 2024-12-26, 2025-01-01.
- OzBuild 6d/w: Mon-Sat 08:00-16:00; Sun off. Exceptions (off unless hours are given): 2024-12-25 to 2024-12-26, 2025-01-01.

## Schedule

| ID | WBS | Activity | Type | Duration | Start | Finish | Predecessors | Complete | Remaining | Planned start | Planned finish | Total float | Free float | Constraint | Calendar |
| --- | --- | --- | --- | --- | --- | --- | --- | --- | --- | --- | --- | --- | --- | --- | --- |
|  | 1 | **Technical Specification** |  |  | 2024-12-10 | 2025-01-09 |  |  |  |  |  |  |  |  |  |
| OZ1000 |  | Approval to Bid | milestone | 0d | 2024-12-10 A | 2024-12-10 A |  | 100% |  | 2024-12-09 | 2024-12-09 |  |  |  |  |
| OZ1010 |  | Determine Installation Requirements |  | 4d | 2024-12-10 A | 2024-12-12 A | OZ1000 | 100% |  | 2024-12-09 | 2024-12-12 |  |  |  |  |
| OZ1020 |  | Create Technical Specification |  | 5d | 2024-12-12 A | 2024-12-20 A | OZ1010 | 100% |  | 2024-12-13 | 2024-12-19 |  |  |  |  |
| OZ1030 |  | Identify Supplier Components |  | 2d | 2024-12-19 A | 2024-12-24 | OZ1020 | 25% | 1.5d | 2024-12-24 | 2024-12-27 | -1.5d | 0d |  |  |
| OZ1040 |  | Validate Technical Specification |  | 2d | 2024-12-20 A | 2025-01-09 | OZ1030 | 10% | 9d | 2024-12-30 | 2024-12-31 | -1.5d | 0d |  |  |
|  | 2 | **Delivery Plan** |  |  | 2025-01-02 | 2025-01-23 |  |  |  |  |  |  |  |  |  |
| OZ1060 |  | Obtain Quotes from Suppliers |  | 8d | 2025-01-02 | 2025-01-13 | OZ1030 |  |  |  |  | 0d | 1.5d | start on or after 2025-01-02 |  |
| OZ1050 |  | Document Delivery Methodology |  | 4d | 2025-01-09 | 2025-01-15 | OZ1040 |  |  |  |  | -1.5d | 0d |  |  |
| OZ1070 |  | Calculate the Bid Estimate |  | 3d | 2025-01-15 | 2025-01-18 | OZ1050, OZ1060 |  |  |  |  | -1.5d | 0d |  | OzBuild 6d/w |
| OZ1080 |  | Create the Project Schedule |  | 3d | 2025-01-18 | 2025-01-22 | OZ1070 |  |  |  |  | -1.5d | 0d |  | OzBuild 6d/w |
| OZ1090 |  | Review the Delivery Plan |  | 1d | 2025-01-22 | 2025-01-23 | OZ1080 |  |  |  |  | -1.5d | 0d |  |  |
|  | 3 | **Bid Document** |  |  | 2025-01-15 | 2025-01-29 |  |  |  |  |  |  |  |  |  |
| OZ1100 |  | Create Draft of Bid Document |  | 6d | 2025-01-15 | 2025-01-23 | OZ1050 |  |  |  |  | -1.5d | 0d |  |  |
| OZ1110 |  | Review Bid Document |  | 2d | 2025-01-23 | 2025-01-27 | OZ1090, OZ1100 |  |  |  |  | -1.5d | 0d |  |  |
| OZ1120 |  | Finalise and Submit Bid Document |  | 2d | 2025-01-27 | 2025-01-29 | OZ1110 |  |  |  |  | -1.5d | 0d |  |  |
| OZ1130 |  | Bid Document Submitted | milestone | 0d | 2025-01-29 | 2025-01-29 | OZ1120 |  |  |  |  | -1.5d | 0d | finish on or before 2025-01-27 |  |

Notes:
- OZ1060: Constraints: Due to the proximity of Christmas management has requested that the quotes / are obtained after New Year to gain better pricing.
- OZ1130: Constraints: Due to the proximity of Christmas management has requested that the quotes / are obtained after New Year to obtain better prices.
