# Bid for Facility Extension

Schedule from Primavera P6, 2024-12-09 to 2024-12-18, data date 2024-12-09.
ï»¿ / RFQ will not be available prior to 09 December 2024.

## Calendars

- OzBuild 5d/w: Mon-Fri 08:00-15:59; Sat-Sun off.
- OzBuild 6d/w: Mon-Sat 08:00-15:59; Sun off.

## Schedule

| ID | WBS | Activity | Type | Duration | Start | Finish | Calendar |
| --- | --- | --- | --- | --- | --- | --- | --- |
|  | 1 | **Technical Specification** |  |  | 2024-12-09 | 2024-12-13 |  |
| OZ1000 |  | Approval to Bid | milestone | 0d | 2024-12-09 | 2024-12-09 |  |
| OZ1010 |  | Determine Installation Requirements |  | 4d | 2024-12-09 | 2024-12-12 |  |
| OZ1020 |  | Create Technical Specification |  | 5d | 2024-12-09 | 2024-12-13 |  |
| OZ1030 |  | Identify Supplier Components |  | 2d | 2024-12-09 | 2024-12-10 |  |
| OZ1040 |  | Validate Technical Specification |  | 2d | 2024-12-09 | 2024-12-10 |  |
|  | 2 | **Delivery Plan** |  |  | 2024-12-09 | 2024-12-18 |  |
| OZ1050 |  | Document Delivery Methodology |  | 4d | 2024-12-09 | 2024-12-12 |  |
| OZ1060 |  | Obtain Quotes from Suppliers |  | 8d | 2024-12-09 | 2024-12-18 |  |
| OZ1070 |  | Calculate the Bid Estimate |  | 3d | 2024-12-09 | 2024-12-11 | OzBuild 6d/w |
| OZ1080 |  | Create the Project Schedule |  | 3d | 2024-12-09 | 2024-12-11 | OzBuild 6d/w |
| OZ1090 |  | Review the Delivery Plan |  | 1d | 2024-12-09 | 2024-12-09 |  |
|  | 3 | **Bid Document** |  |  | 2024-12-09 | 2024-12-16 |  |
| OZ1100 |  | Create Draft of Bid Document |  | 6d | 2024-12-09 | 2024-12-16 |  |
| OZ1110 |  | Review Bid Document |  | 4d | 2024-12-09 | 2024-12-12 |  |
| OZ1120 |  | Finalise and Submit Bid Document |  | 2d | 2024-12-09 | 2024-12-10 |  |
| OZ1130 |  | Bid Document Submitted | milestone | 0d | 2024-12-09 | 2024-12-09 |  |
| OZ1140 |  | New Activity |  | 5d | 2024-12-09 | 2024-12-13 |  |

# Bid for Facility Extension

Schedule from Primavera P6, 2024-12-09 to 2025-01-23, data date 2024-12-09.
ï»¿ / RFQ will not be available prior to 09 December 2024.

## Calendars

- OzBuild 5d/w: Mon-Fri 08:00-15:59; Sat-Sun off. Exceptions (off unless hours are given): 2024-12-25 to 2024-12-26, 2025-01-01.
- OzBuild 6d/w: Mon-Sat 08:00-15:59; Sun off. Exceptions (off unless hours are given): 2024-12-25 to 2024-12-26, 2025-01-01.

## Schedule

| ID | WBS | Activity | Type | Duration | Start | Finish | Predecessors | Calendar |
| --- | --- | --- | --- | --- | --- | --- | --- | --- |
|  | 1 | **Technical Specification** |  |  | 2024-12-09 | 2024-12-27 |  |  |
| OZ1000 |  | Approval to Bid | milestone | 0d | 2024-12-09 | 2024-12-09 |  |  |
| OZ1010 |  | Determine Installation Requirements |  | 4d | 2024-12-09 | 2024-12-12 | OZ1000 |  |
| OZ1020 |  | Create Technical Specification |  | 5d | 2024-12-13 | 2024-12-19 | OZ1010 |  |
| OZ1030 |  | Identify Supplier Components |  | 2d | 2024-12-20 | 2024-12-23 | OZ1020 |  |
| OZ1040 |  | Validate Technical Specification |  | 2d | 2024-12-24 | 2024-12-27 | OZ1030 |  |
|  | 2 | **Delivery Plan** |  |  | 2024-12-24 | 2025-01-15 |  |  |
| OZ1060 |  | Obtain Quotes from Suppliers |  | 8d | 2024-12-24 | 2025-01-07 | OZ1030 |  |
| OZ1050 |  | Document Delivery Methodology |  | 4d | 2024-12-30 | 2025-01-03 | OZ1040 |  |
| OZ1070 |  | Calculate the Bid Estimate |  | 3d | 2025-01-08 | 2025-01-10 | OZ1050, OZ1060 | OzBuild 6d/w |
| OZ1080 |  | Create the Project Schedule |  | 3d | 2025-01-11 | 2025-01-14 | OZ1070 | OzBuild 6d/w |
| OZ1090 |  | Review the Delivery Plan |  | 1d | 2025-01-15 | 2025-01-15 | OZ1080 |  |
|  | 3 | **Bid Document** |  |  | 2025-01-06 | 2025-01-23 |  |  |
| OZ1100 |  | Create Draft of Bid Document |  | 6d | 2025-01-06 | 2025-01-13 | OZ1050 |  |
| OZ1110 |  | Review Bid Document |  | 4d | 2025-01-16 | 2025-01-21 | OZ1090, OZ1100 |  |
| OZ1120 |  | Finalise and Submit Bid Document |  | 2d | 2025-01-22 | 2025-01-23 | OZ1110 |  |
| OZ1130 |  | Bid Document Submitted | milestone | 0d | 2025-01-23 | 2025-01-23 | OZ1120 |  |

# Bid for Facility Extension

Schedule from Primavera P6, 2024-12-09 to 2025-01-27, data date 2024-12-09.
ï»¿ / RFQ will not be available prior to 09 December 2024.

## Calendars

- OzBuild 5d/w: Mon-Fri 08:00-15:59; Sat-Sun off. Exceptions (off unless hours are given): 2024-12-25 to 2024-12-26, 2025-01-01.
- OzBuild 6d/w: Mon-Sat 08:00-15:59; Sun off. Exceptions (off unless hours are given): 2024-12-25 to 2024-12-26, 2025-01-01.

## Schedule

| ID | WBS | Activity | Type | Duration | Start | Finish | Predecessors | Constraint | Calendar |
| --- | --- | --- | --- | --- | --- | --- | --- | --- | --- |
|  | 1 | **Technical Specification** |  |  | 2024-12-09 | 2024-12-27 |  |  |  |
| OZ1000 |  | Approval to Bid | milestone | 0d | 2024-12-09 | 2024-12-09 |  |  |  |
| OZ1010 |  | Determine Installation Requirements |  | 4d | 2024-12-09 | 2024-12-12 | OZ1000 |  |  |
| OZ1020 |  | Create Technical Specification |  | 5d | 2024-12-13 | 2024-12-19 | OZ1010 |  |  |
| OZ1030 |  | Identify Supplier Components |  | 2d | 2024-12-20 | 2024-12-23 | OZ1020 |  |  |
| OZ1040 |  | Validate Technical Specification |  | 2d | 2024-12-24 | 2024-12-27 | OZ1030 |  |  |
|  | 2 | **Delivery Plan** |  |  | 2024-12-30 | 2025-01-21 |  |  |  |
| OZ1050 |  | Document Delivery Methodology |  | 4d | 2024-12-30 | 2025-01-03 | OZ1040 |  |  |
| OZ1060 |  | Obtain Quotes from Suppliers |  | 8d | 2025-01-02 | 2025-01-13 | OZ1030 | start on or after 2025-01-02 |  |
| OZ1070 |  | Calculate the Bid Estimate |  | 3d | 2025-01-14 | 2025-01-16 | OZ1050, OZ1060 |  | OzBuild 6d/w |
| OZ1080 |  | Create the Project Schedule |  | 3d | 2025-01-17 | 2025-01-20 | OZ1070 |  | OzBuild 6d/w |
| OZ1090 |  | Review the Delivery Plan |  | 1d | 2025-01-21 | 2025-01-21 | OZ1080 |  |  |
|  | 3 | **Bid Document** |  |  | 2025-01-06 | 2025-01-27 |  |  |  |
| OZ1100 |  | Create Draft of Bid Document |  | 6d | 2025-01-06 | 2025-01-13 | OZ1050 |  |  |
| OZ1110 |  | Review Bid Document |  | 2d | 2025-01-22 | 2025-01-23 | OZ1090, OZ1100 |  |  |
| OZ1120 |  | Finalise and Submit Bid Document |  | 2d | 2025-01-24 | 2025-01-27 | OZ1110 |  |  |
| OZ1130 |  | Bid Document Submitted | milestone | 0d | 2025-01-27 | 2025-01-27 | OZ1120 | finish on or before 2025-01-27 |  |

Notes:
- OZ1060: ï»¿ / Due to the proximity of Christmas management has requested that the quotes / are obtained after New Year to gain better pricing.
- OZ1130: ï»¿ / Due to the proximity of Christmas management has requested that the quotes / are obtained after New Year to obtain better prices.

# Bid for Facility Extension

Schedule from Primavera P6, 2024-12-10 to 2025-01-29, data date 2024-12-23, baseline: Bid for Facility Extension - Baseline, A marks actual dates.
ï»¿ / RFQ will not be available prior to 09 December 2024.

## Calendars

- OzBuild 5d/w: Mon-Fri 08:00-15:59; Sat-Sun off. Exceptions (off unless hours are given): 2024-12-25 to 2024-12-26, 2025-01-01.
- OzBuild 6d/w: Mon-Sat 08:00-15:59; Sun off. Exceptions (off unless hours are given): 2024-12-25 to 2024-12-26, 2025-01-01.

## Schedule

| ID | WBS | Activity | Type | Duration | Start | Finish | Predecessors | Complete | Remaining | Planned start | Planned finish | Baseline start | Baseline finish | Baseline duration | Constraint | Calendar |
| --- | --- | --- | --- | --- | --- | --- | --- | --- | --- | --- | --- | --- | --- | --- | --- | --- |
|  | 1 | **Technical Specification** |  |  | 2024-12-10 | 2025-01-09 |  |  |  |  |  |  |  |  |  |  |
| OZ1000 |  | Approval to Bid | milestone | 0d | 2024-12-10 A | 2024-12-10 A |  | 100% |  | 2024-12-09 | 2024-12-09 | 2024-12-09 | 2024-12-09 | 0d |  |  |
| OZ1010 |  | Determine Installation Requirements |  | 4d | 2024-12-10 A | 2024-12-12 A | OZ1000 | 100% |  | 2024-12-09 | 2024-12-12 | 2024-12-09 | 2024-12-12 | 4d |  |  |
| OZ1020 |  | Create Technical Specification |  | 5d | 2024-12-12 A | 2024-12-20 A | OZ1010 | 100% |  | 2024-12-13 | 2024-12-19 | 2024-12-13 | 2024-12-19 | 5d |  |  |
| OZ1030 |  | Identify Supplier Components |  | 2d | 2024-12-19 A | 2024-12-24 | OZ1020 | 25% | 1.5d | 2024-12-24 | 2024-12-27 | 2024-12-20 | 2024-12-23 | 2d |  |  |
| OZ1040 |  | Validate Technical Specification |  | 2d | 2024-12-20 A | 2025-01-09 | OZ1030 | 10% | 9d | 2024-12-30 | 2024-12-31 | 2024-12-24 | 2024-12-27 | 2d |  |  |
|  | 2 | **Delivery Plan** |  |  | 2025-01-02 | 2025-01-23 |  |  |  |  |  |  |  |  |  |  |
| OZ1060 |  | Obtain Quotes from Suppliers |  | 8d | 2025-01-02 | 2025-01-13 | OZ1030 |  |  |  |  | 2025-01-02 | 2025-01-13 | 8d | start on or after 2025-01-02 |  |
| OZ1050 |  | Document Delivery Methodology |  | 4d | 2025-01-09 | 2025-01-15 | OZ1040 |  |  |  |  | 2024-12-30 | 2025-01-03 | 4d |  |  |
| OZ1070 |  | Calculate the Bid Estimate |  | 3d | 2025-01-15 | 2025-01-18 | OZ1050, OZ1060 |  |  |  |  | 2025-01-14 | 2025-01-16 | 3d |  | OzBuild 6d/w |
| OZ1080 |  | Create the Project Schedule |  | 3d | 2025-01-18 | 2025-01-22 | OZ1070 |  |  |  |  | 2025-01-17 | 2025-01-20 | 3d |  | OzBuild 6d/w |
| OZ1090 |  | Review the Delivery Plan |  | 1d | 2025-01-22 | 2025-01-23 | OZ1080 |  |  |  |  | 2025-01-21 | 2025-01-21 | 1d |  |  |
|  | 3 | **Bid Document** |  |  | 2025-01-15 | 2025-01-29 |  |  |  |  |  |  |  |  |  |  |
| OZ1100 |  | Create Draft of Bid Document |  | 6d | 2025-01-15 | 2025-01-23 | OZ1050 |  |  |  |  | 2025-01-06 | 2025-01-13 | 6d |  |  |
| OZ1110 |  | Review Bid Document |  | 2d | 2025-01-23 | 2025-01-27 | OZ1090, OZ1100 |  |  |  |  | 2025-01-22 | 2025-01-23 | 2d |  |  |
| OZ1120 |  | Finalise and Submit Bid Document |  | 2d | 2025-01-27 | 2025-01-29 | OZ1110 |  |  |  |  | 2025-01-24 | 2025-01-27 | 2d |  |  |
| OZ1130 |  | Bid Document Submitted | milestone | 0d | 2025-01-29 | 2025-01-29 | OZ1120 |  |  |  |  | 2025-01-27 | 2025-01-27 | 0d | finish on or before 2025-01-27 |  |

Notes:
- OZ1060: ï»¿ / Due to the proximity of Christmas management has requested that the quotes / are obtained after New Year to gain better pricing.

# Bid for Facility Extension

Schedule from Primavera P6, 2024-12-09 to 2025-01-30, data date 2024-12-09, baseline: Bid for Facility Extension - Original Baseline.
ï»¿ / RFQ will not be available prior to 09 December 2024.

## Calendars

- OzBuild 5d/w: Mon-Fri 08:00-15:59; Sat-Sun off. Exceptions (off unless hours are given): 2024-12-25 to 2024-12-26, 2025-01-01.
- OzBuild 6d/w: Mon-Sat 08:00-15:59; Sun off. Exceptions (off unless hours are given): 2024-12-25 to 2024-12-26, 2025-01-01.

## Resources

| Resource | Group | Rate |
| --- | --- | --- |
| Project Manager | labor | 120 |
| System Engineer | labor | 90 |
| Purchasing Officer | labor | 70 |
| Project Support | labor | 80 |
| Clerical Support | labor | 50 |
| Report Binding | material | 100 |

## Schedule

| ID | WBS | Activity | Type | Duration | Start | Finish | Predecessors | Baseline start | Baseline finish | Baseline duration | Constraint | Calendar | Resources | Cost |
| --- | --- | --- | --- | --- | --- | --- | --- | --- | --- | --- | --- | --- | --- | --- |
|  | 1 | **Technical Specification** |  |  | 2024-12-09 | 2024-12-27 |  |  |  |  |  |  |  |  |
| OZ1000 |  | Approval to Bid | milestone | 0d | 2024-12-09 | 2024-12-09 |  | 2024-12-09 | 2024-12-09 | 0d |  |  |  |  |
| OZ1010 |  | Determine Installation Requirements |  | 4d | 2024-12-09 | 2024-12-12 | OZ1000 | 2024-12-09 | 2024-12-12 | 4d |  |  | Project Manager [32 h]; System Engineer [32 h] | 6,720 |
| OZ1020 |  | Create Technical Specification |  | 5d | 2024-12-13 | 2024-12-19 | OZ1010 | 2024-12-13 | 2024-12-19 | 5d |  |  | System Engineer [40 h] | 8,600 |
| OZ1030 |  | Identify Supplier Components |  | 2d | 2024-12-20 | 2024-12-23 | OZ1020 | 2024-12-20 | 2024-12-23 | 2d |  |  | Purchasing Officer [16 h] | 1,120 |
| OZ1040 |  | Validate Technical Specification |  | 2d | 2024-12-24 | 2024-12-27 | OZ1030 | 2024-12-24 | 2024-12-27 | 2d |  |  | Project Manager [16 h]; System Engineer [16 h] | 3,360 |
|  | 2 | **Delivery Plan** |  |  | 2024-12-30 | 2025-01-24 |  |  |  |  |  |  |  |  |
| OZ1050 |  | Document Delivery Methodology |  | 4d | 2024-12-30 | 2025-01-03 | OZ1040 | 2024-12-30 | 2025-01-03 | 4d |  |  | Project Manager [32 h] | 3,840 |
| OZ1060 |  | Obtain Quotes from Suppliers |  | 8d | 2025-01-06 | 2025-01-15 | OZ1030 | 2025-01-02 | 2025-01-13 | 8d | start on or after 2025-01-02 |  | Project Manager [64 h]; Purchasing Officer [64 h] | 12,160 |
| OZ1070 |  | Calculate the Bid Estimate |  | 3d | 2025-01-16 | 2025-01-18 | OZ1050, OZ1060 | 2025-01-14 | 2025-01-16 | 3d |  | OzBuild 6d/w | Project Support [24 h] | 1,920 |
| OZ1080 |  | Create the Project Schedule |  | 3d | 2025-01-20 | 2025-01-22 | OZ1070 | 2025-01-17 | 2025-01-20 | 3d |  | OzBuild 6d/w | Project Support [24 h] | 1,920 |
| OZ1090 |  | Review the Delivery Plan |  | 1d | 2025-01-24 | 2025-01-24 | OZ1080 | 2025-01-21 | 2025-01-21 | 1d |  |  | Project Manager [8 h]; System Engineer [8 h] | 1,680 |
|  | 3 | **Bid Document** |  |  | 2025-01-16 | 2025-01-30 |  |  |  |  |  |  |  |  |
| OZ1100 |  | Create Draft of Bid Document |  | 6d | 2025-01-16 | 2025-01-23 | OZ1050 | 2025-01-06 | 2025-01-13 | 6d |  |  | Project Manager [48 h]; Clerical Support [48 h] | 8,160 |
| OZ1110 |  | Review Bid Document |  | 2d | 2025-01-27 | 2025-01-28 | OZ1090, OZ1100 | 2025-01-22 | 2025-01-23 | 2d |  |  | Project Manager [16 h]; System Engineer [16 h] | 3,360 |
| OZ1120 |  | Finalise and Submit Bid Document |  | 2d | 2025-01-29 | 2025-01-30 | OZ1110 | 2025-01-24 | 2025-01-27 | 2d |  |  | Project Manager [16 h]; Report Binding [3] | 2,220 |
| OZ1130 |  | Bid Document Submitted | milestone | 0d | 2025-01-30 | 2025-01-30 | OZ1120 | 2025-01-27 | 2025-01-27 | 0d | finish on or before 2025-01-27 |  |  |  |

Notes:
- OZ1020: Expenses: Specialists Consultant
- OZ1060: ï»¿ / Due to the proximity of Christmas management has requested that the quotes / are obtained after New Year to gain better pricing.

# Bid for Facility Extension

Schedule from Primavera P6, 2024-12-10 to 2025-01-27, data date 2024-12-16, baseline: Bid for Facility Extension - B7, A marks actual dates.
ï»¿ / RFQ will not be available prior to 09 December 2024.

## Calendars

- OzBuild 5d/w: Mon-Fri 08:00-15:59; Sat-Sun off. Exceptions (off unless hours are given): 2024-12-25 to 2024-12-26, 2025-01-01.
- OzBuild 6d/w: Mon-Sat 08:00-15:59; Sun off. Exceptions (off unless hours are given): 2024-12-25 to 2024-12-26, 2025-01-01.

## Schedule

| ID | WBS | Activity | Type | Duration | Start | Finish | Predecessors | Complete | Remaining | Planned start | Planned finish | Baseline start | Baseline finish | Baseline duration | Constraint | Calendar |
| --- | --- | --- | --- | --- | --- | --- | --- | --- | --- | --- | --- | --- | --- | --- | --- | --- |
|  | 1 | **Technical Specification** |  |  | 2024-12-10 | 2024-12-31 |  |  |  |  |  |  |  |  |  |  |
| OZ1000 |  | Approval to Bid | milestone | 0d | 2024-12-10 A | 2024-12-10 A |  | 100% |  | 2024-12-09 | 2024-12-09 | 2024-12-09 | 2024-12-09 | 0d |  |  |
| OZ1010 |  | Determine Installation Requirements |  | 4d | 2024-12-10 A | 2024-12-12 A | OZ1000 | 100% |  | 2024-12-09 | 2024-12-12 | 2024-12-09 | 2024-12-12 | 4d |  |  |
| OZ1020 |  | Create Technical Specification |  | 5d | 2024-12-12 A | 2024-12-23 | OZ1010 | 60% | 6d | 2024-12-13 | 2024-12-19 | 2024-12-13 | 2024-12-19 | 5d |  |  |
| OZ1030 |  | Identify Supplier Components |  | 2d | 2024-12-24 | 2024-12-27 | OZ1020 |  |  |  |  | 2024-12-20 | 2024-12-23 | 2d |  |  |
| OZ1040 |  | Validate Technical Specification |  | 2d | 2024-12-30 | 2024-12-31 | OZ1030 |  |  |  |  | 2024-12-24 | 2024-12-27 | 2d |  |  |
|  | 2 | **Delivery Plan** |  |  | 2025-01-02 | 2025-01-21 |  |  |  |  |  |  |  |  |  |  |
| OZ1050 |  | Document Delivery Methodology |  | 4d | 2025-01-02 | 2025-01-07 | OZ1040 |  |  |  |  | 2024-12-30 | 2025-01-03 | 4d |  |  |
| OZ1060 |  | Obtain Quotes from Suppliers |  | 8d | 2025-01-02 | 2025-01-13 | OZ1030 |  |  |  |  | 2025-01-02 | 2025-01-13 | 8d | start on or after 2025-01-02 |  |
| OZ1070 |  | Calculate the Bid Estimate |  | 3d | 2025-01-14 | 2025-01-16 | OZ1050, OZ1060 |  |  |  |  | 2025-01-14 | 2025-01-16 | 3d |  | OzBuild 6d/w |
| OZ1080 |  | Create the Project Schedule |  | 3d | 2025-01-17 | 2025-01-20 | OZ1070 |  |  |  |  | 2025-01-17 | 2025-01-20 | 3d |  | OzBuild 6d/w |
| OZ1090 |  | Review the Delivery Plan |  | 1d | 2025-01-21 | 2025-01-21 | OZ1080 |  |  |  |  | 2025-01-21 | 2025-01-21 | 1d |  |  |
|  | 3 | **Bid Document** |  |  | 2025-01-08 | 2025-01-27 |  |  |  |  |  |  |  |  |  |  |
| OZ1100 |  | Create Draft of Bid Document |  | 6d | 2025-01-08 | 2025-01-15 | OZ1050 |  |  |  |  | 2025-01-06 | 2025-01-13 | 6d |  |  |
| OZ1110 |  | Review Bid Document |  | 2d | 2025-01-22 | 2025-01-23 | OZ1090, OZ1100 |  |  |  |  | 2025-01-22 | 2025-01-23 | 2d |  |  |
| OZ1120 |  | Finalise and Submit Bid Document |  | 2d | 2025-01-24 | 2025-01-27 | OZ1110 |  |  |  |  | 2025-01-24 | 2025-01-27 | 2d |  |  |
| OZ1130 |  | Bid Document Submitted | milestone | 0d | 2025-01-27 | 2025-01-27 | OZ1120 |  |  |  |  | 2025-01-27 | 2025-01-27 | 0d | finish on or before 2025-01-27 |  |

Notes:
- OZ1060: ï»¿ / Due to the proximity of Christmas management has requested that the quotes / are obtained after New Year to gain better pricing.
- OZ1130: ï»¿ / Due to the proximity of Christmas management has requested that the quotes / are obtained after New Year to obtain better prices.

# Bid for Facility Extension

Schedule from Primavera P6, 2024-12-10 to 2025-01-27, data date 2024-12-23, baseline: Bid for Facility Extension - Baseline, A marks actual dates.
ï»¿ / RFQ will not be available prior to 09 December 2024.

## Calendars

- OzBuild 5d/w: Mon-Fri 08:00-15:59; Sat-Sun off. Exceptions (off unless hours are given): 2024-12-25 to 2024-12-26, 2025-01-01.
- OzBuild 6d/w: Mon-Sat 08:00-15:59; Sun off. Exceptions (off unless hours are given): 2024-12-25 to 2024-12-26, 2025-01-01.

## Schedule

| ID | WBS | Activity | Type | Duration | Start | Finish | Predecessors | Complete | Remaining | Planned start | Planned finish | Baseline start | Baseline finish | Baseline duration | Constraint | Calendar |
| --- | --- | --- | --- | --- | --- | --- | --- | --- | --- | --- | --- | --- | --- | --- | --- | --- |
|  | 1 | **Technical Specification** |  |  | 2024-12-10 | 2025-01-07 |  |  |  |  |  |  |  |  |  |  |
| OZ1000 |  | Approval to Bid | milestone | 0d | 2024-12-10 A | 2024-12-10 A |  | 100% |  | 2024-12-09 | 2024-12-09 | 2024-12-09 | 2024-12-09 | 0d |  |  |
| OZ1010 |  | Determine Installation Requirements |  | 4d | 2024-12-10 A | 2024-12-12 A | OZ1000 | 100% |  | 2024-12-09 | 2024-12-12 | 2024-12-09 | 2024-12-12 | 4d |  |  |
| OZ1020 |  | Create Technical Specification |  | 5d | 2024-12-12 A | 2024-12-20 A | OZ1010 | 100% |  | 2024-12-13 | 2024-12-19 | 2024-12-13 | 2024-12-19 | 5d |  |  |
| OZ1030 |  | Identify Supplier Components |  | 2d | 2024-12-19 A | 2024-12-24 | OZ1020 | 50% | 2d | 2024-12-24 | 2024-12-27 | 2024-12-20 | 2024-12-23 | 2d |  |  |
| OZ1040 |  | Validate Technical Specification |  | 2d | 2024-12-20 A | 2025-01-07 | OZ1030 | 10% | 9d | 2024-12-30 | 2024-12-31 | 2024-12-24 | 2024-12-27 | 2d |  |  |
|  | 2 | **Delivery Plan** |  |  | 2025-01-02 | 2025-01-21 |  |  |  |  |  |  |  |  |  |  |
| OZ1060 |  | Obtain Quotes from Suppliers |  | 8d | 2025-01-02 | 2025-01-13 | OZ1030 |  |  |  |  | 2025-01-02 | 2025-01-13 | 8d | start on or after 2025-01-02 |  |
| OZ1050 |  | Document Delivery Methodology |  | 4d | 2025-01-08 | 2025-01-13 | OZ1040 |  |  |  |  | 2024-12-30 | 2025-01-03 | 4d |  |  |
| OZ1070 |  | Calculate the Bid Estimate |  | 3d | 2025-01-14 | 2025-01-16 | OZ1050, OZ1060 |  |  |  |  | 2025-01-14 | 2025-01-16 | 3d |  | OzBuild 6d/w |
| OZ1080 |  | Create the Project Schedule |  | 3d | 2025-01-17 | 2025-01-20 | OZ1070 |  |  |  |  | 2025-01-17 | 2025-01-20 | 3d |  | OzBuild 6d/w |
| OZ1090 |  | Review the Delivery Plan |  | 1d | 2025-01-21 | 2025-01-21 | OZ1080 |  |  |  |  | 2025-01-21 | 2025-01-21 | 1d |  |  |
|  | 3 | **Bid Document** |  |  | 2025-01-14 | 2025-01-27 |  |  |  |  |  |  |  |  |  |  |
| OZ1100 |  | Create Draft of Bid Document |  | 6d | 2025-01-14 | 2025-01-21 | OZ1050 |  |  |  |  | 2025-01-06 | 2025-01-13 | 6d |  |  |
| OZ1110 |  | Review Bid Document |  | 2d | 2025-01-22 | 2025-01-23 | OZ1090, OZ1100 |  |  |  |  | 2025-01-22 | 2025-01-23 | 2d |  |  |
| OZ1120 |  | Finalise and Submit Bid Document |  | 2d | 2025-01-24 | 2025-01-27 | OZ1110 |  |  |  |  | 2025-01-24 | 2025-01-27 | 2d |  |  |
| OZ1130 |  | Bid Document Submitted | milestone | 0d | 2025-01-27 | 2025-01-27 | OZ1120 |  |  |  |  | 2025-01-27 | 2025-01-27 | 0d | finish on or before 2025-01-27 |  |

Notes:
- OZ1060: ï»¿ / Due to the proximity of Christmas management has requested that the quotes / are obtained after New Year to gain better pricing.
- OZ1130: ï»¿ / Due to the proximity of Christmas management has requested that the quotes / are obtained after New Year to obtain better prices.

# Bid for Facility Extension

Schedule from Primavera P6, 2024-12-09 to 2025-01-27, data date 2024-12-09, baseline: Bid for Facility Extension - Baseline.
ï»¿ / RFQ will not be available prior to 09 December 2024.

## Calendars

- OzBuild 5d/w: Mon-Fri 08:00-15:59; Sat-Sun off. Exceptions (off unless hours are given): 2024-12-25 to 2024-12-26, 2025-01-01.
- OzBuild 6d/w: Mon-Sat 08:00-15:59; Sun off. Exceptions (off unless hours are given): 2024-12-25 to 2024-12-26, 2025-01-01.

## Schedule

| ID | WBS | Activity | Type | Duration | Start | Finish | Predecessors | Baseline start | Baseline finish | Baseline duration | Constraint | Calendar |
| --- | --- | --- | --- | --- | --- | --- | --- | --- | --- | --- | --- | --- |
|  | 1 | **Technical Specification** |  |  | 2024-12-09 | 2024-12-27 |  |  |  |  |  |  |
| OZ1000 |  | Approval to Bid | milestone | 0d | 2024-12-09 | 2024-12-09 |  | 2024-12-09 | 2024-12-09 | 0d |  |  |
| OZ1010 |  | Determine Installation Requirements |  | 4d | 2024-12-09 | 2024-12-12 | OZ1000 | 2024-12-09 | 2024-12-12 | 4d |  |  |
| OZ1020 |  | Create Technical Specification |  | 5d | 2024-12-13 | 2024-12-19 | OZ1010 | 2024-12-13 | 2024-12-19 | 5d |  |  |
| OZ1030 |  | Identify Supplier Components |  | 2d | 2024-12-20 | 2024-12-23 | OZ1020 | 2024-12-20 | 2024-12-23 | 2d |  |  |
| OZ1040 |  | Validate Technical Specification |  | 2d | 2024-12-24 | 2024-12-27 | OZ1030 | 2024-12-24 | 2024-12-27 | 2d |  |  |
|  | 2 | **Delivery Plan** |  |  | 2024-12-30 | 2025-01-21 |  |  |  |  |  |  |
| OZ1050 |  | Document Delivery Methodology |  | 4d | 2024-12-30 | 2025-01-03 | OZ1040 | 2024-12-30 | 2025-01-03 | 4d |  |  |
| OZ1060 |  | Obtain Quotes from Suppliers |  | 8d | 2025-01-02 | 2025-01-13 | OZ1030 | 2025-01-02 | 2025-01-13 | 8d | start on or after 2025-01-02 |  |
| OZ1070 |  | Calculate the Bid Estimate |  | 3d | 2025-01-14 | 2025-01-16 | OZ1050, OZ1060 | 2025-01-14 | 2025-01-16 | 3d |  | OzBuild 6d/w |
| OZ1080 |  | Create the Project Schedule |  | 3d | 2025-01-17 | 2025-01-20 | OZ1070 | 2025-01-17 | 2025-01-20 | 3d |  | OzBuild 6d/w |
| OZ1090 |  | Review the Delivery Plan |  | 1d | 2025-01-21 | 2025-01-21 | OZ1080 | 2025-01-21 | 2025-01-21 | 1d |  |  |
|  | 3 | **Bid Document** |  |  | 2025-01-06 | 2025-01-27 |  |  |  |  |  |  |
| OZ1100 |  | Create Draft of Bid Document |  | 6d | 2025-01-06 | 2025-01-13 | OZ1050 | 2025-01-06 | 2025-01-13 | 6d |  |  |
| OZ1110 |  | Review Bid Document |  | 2d | 2025-01-22 | 2025-01-23 | OZ1090, OZ1100 | 2025-01-22 | 2025-01-23 | 2d |  |  |
| OZ1120 |  | Finalise and Submit Bid Document |  | 2d | 2025-01-24 | 2025-01-27 | OZ1110 | 2025-01-24 | 2025-01-27 | 2d |  |  |
| OZ1130 |  | Bid Document Submitted | milestone | 0d | 2025-01-27 | 2025-01-27 | OZ1120 | 2025-01-27 | 2025-01-27 | 0d | finish on or before 2025-01-27 |  |

Notes:
- OZ1060: ï»¿ / Due to the proximity of Christmas management has requested that the quotes / are obtained after New Year to gain better pricing.
- OZ1130: ï»¿ / Due to the proximity of Christmas management has requested that the quotes / are obtained after New Year to obtain better prices.

# Bid for Facility Extension

Schedule from Primavera P6, 2024-12-10 to 2025-01-29, data date 2024-12-23, baseline: Bid for Facility Extension - B1, A marks actual dates.
ï»¿ / RFQ will not be available prior to 09 December 2024.

## Calendars

- OzBuild 5d/w: Mon-Fri 08:00-15:59; Sat-Sun off. Exceptions (off unless hours are given): 2024-12-25 to 2024-12-26, 2025-01-01.
- OzBuild 6d/w: Mon-Sat 08:00-15:59; Sun off. Exceptions (off unless hours are given): 2024-12-25 to 2024-12-26, 2025-01-01.

## Schedule

| ID | WBS | Activity | Type | Duration | Start | Finish | Predecessors | Complete | Remaining | Planned start | Planned finish | Baseline start | Baseline finish | Baseline duration | Constraint | Calendar |
| --- | --- | --- | --- | --- | --- | --- | --- | --- | --- | --- | --- | --- | --- | --- | --- | --- |
|  | 1 | **Technical Specification** |  |  | 2024-12-10 | 2025-01-09 |  |  |  |  |  |  |  |  |  |  |
| OZ1000 |  | Approval to Bid | milestone | 0d | 2024-12-10 A | 2024-12-10 A |  | 100% |  | 2024-12-09 | 2024-12-09 | 2024-12-09 | 2024-12-09 | 0d |  |  |
| OZ1010 |  | Determine Installation Requirements |  | 4d | 2024-12-10 A | 2024-12-12 A | OZ1000 | 100% |  | 2024-12-09 | 2024-12-12 | 2024-12-09 | 2024-12-12 | 4d |  |  |
| OZ1020 |  | Create Technical Specification |  | 5d | 2024-12-12 A | 2024-12-20 A | OZ1010 | 100% |  | 2024-12-13 | 2024-12-19 | 2024-12-13 | 2024-12-19 | 5d |  |  |
| OZ1030 |  | Identify Supplier Components |  | 2d | 2024-12-19 A | 2024-12-24 | OZ1020 | 25% | 1.5d | 2024-12-24 | 2024-12-27 | 2024-12-20 | 2024-12-23 | 2d |  |  |
| OZ1040 |  | Validate Technical Specification |  | 2d | 2024-12-20 A | 2025-01-09 | OZ1030 | 10% | 9d | 2024-12-30 | 2024-12-31 | 2024-12-24 | 2024-12-27 | 2d |  |  |
|  | 2 | **Delivery Plan** |  |  | 2025-01-02 | 2025-01-23 |  |  |  |  |  |  |  |  |  |  |
| OZ1060 |  | Obtain Quotes from Suppliers |  | 8d | 2025-01-02 | 2025-01-13 | OZ1030 |  |  |  |  | 2025-01-02 | 2025-01-13 | 8d | start on or after 2025-01-02 |  |
| OZ1050 |  | Document Delivery Methodology |  | 4d | 2025-01-09 | 2025-01-15 | OZ1040 |  |  |  |  | 2024-12-30 | 2025-01-03 | 4d |  |  |
| OZ1070 |  | Calculate the Bid Estimate |  | 3d | 2025-01-15 | 2025-01-18 | OZ1050, OZ1060 |  |  |  |  | 2025-01-14 | 2025-01-16 | 3d |  | OzBuild 6d/w |
| OZ1080 |  | Create the Project Schedule |  | 3d | 2025-01-18 | 2025-01-22 | OZ1070 |  |  |  |  | 2025-01-17 | 2025-01-20 | 3d |  | OzBuild 6d/w |
| OZ1090 |  | Review the Delivery Plan |  | 1d | 2025-01-22 | 2025-01-23 | OZ1080 |  |  |  |  | 2025-01-21 | 2025-01-21 | 1d |  |  |
|  | 3 | **Bid Document** |  |  | 2025-01-15 | 2025-01-29 |  |  |  |  |  |  |  |  |  |  |
| OZ1100 |  | Create Draft of Bid Document |  | 6d | 2025-01-15 | 2025-01-23 | OZ1050 |  |  |  |  | 2025-01-06 | 2025-01-13 | 6d |  |  |
| OZ1110 |  | Review Bid Document |  | 2d | 2025-01-23 | 2025-01-27 | OZ1090, OZ1100 |  |  |  |  | 2025-01-22 | 2025-01-23 | 2d |  |  |
| OZ1120 |  | Finalise and Submit Bid Document |  | 2d | 2025-01-27 | 2025-01-29 | OZ1110 |  |  |  |  | 2025-01-24 | 2025-01-27 | 2d |  |  |
| OZ1130 |  | Bid Document Submitted | milestone | 0d | 2025-01-29 | 2025-01-29 | OZ1120 |  |  |  |  | 2025-01-27 | 2025-01-27 | 0d | finish on or before 2025-01-27 |  |

Notes:
- OZ1060: ï»¿ / Due to the proximity of Christmas management has requested that the quotes / are obtained after New Year to gain better pricing.
- OZ1130: ï»¿ / Due to the proximity of Christmas management has requested that the quotes / are obtained after New Year to obtain better prices.

# Bid for Facility Extension

Schedule from Primavera P6, 2024-12-10 to 2025-01-27, data date 2024-12-16, baseline: Bid for Facility Extension - Original Baseline - B2, A marks actual dates.
ï»¿ / RFQ will not be available prior to 09 December 2024.

## Calendars

- OzBuild 5d/w: Mon-Fri 08:00-15:59; Sat-Sun off. Exceptions (off unless hours are given): 2024-12-25 to 2024-12-26, 2025-01-01.
- OzBuild 6d/w: Mon-Sat 08:00-15:59; Sun off. Exceptions (off unless hours are given): 2024-12-25 to 2024-12-26, 2025-01-01.

## Resources

| Resource | Group | Rate |
| --- | --- | --- |
| Project Manager | labor | 120 |
| System Engineer | labor | 90 |
| Purchasing Officer | labor | 70 |
| Project Support | labor | 80 |
| Clerical Support | labor | 50 |
| Report Binding | material | 100 |

## Schedule

| ID | WBS | Activity | Type | Duration | Start | Finish | Predecessors | Complete | Remaining | Planned start | Planned finish | Baseline start | Baseline finish | Baseline duration | Constraint | Calendar | Resources | Cost | Actual cost |
| --- | --- | --- | --- | --- | --- | --- | --- | --- | --- | --- | --- | --- | --- | --- | --- | --- | --- | --- | --- |
|  | 1 | **Technical Specification** |  |  | 2024-12-10 | 2024-12-23 |  |  |  |  |  |  |  |  |  |  |  |  |  |
| OZ1000 |  | Approval to Bid | milestone | 0d | 2024-12-10 A | 2024-12-10 A |  | 100% |  | 2024-12-09 | 2024-12-09 | 2024-12-09 | 2024-12-09 | 0d |  |  |  |  |  |
| OZ1010 |  | Determine Installation Requirements |  | 4d | 2024-12-10 A | 2024-12-12 A | OZ1000 | 100% |  | 2024-12-09 | 2024-12-12 | 2024-12-09 | 2024-12-12 | 4d |  |  | Project Manager [32 h]; System Engineer [32 h] | 6,720 | 6,720 |
| OZ1020 |  | Create Technical Specification |  | 5d | 2024-12-12 A | 2024-12-17 | OZ1010 | 40% | 2d | 2024-12-13 | 2024-12-19 | 2024-12-13 | 2024-12-19 | 5d |  |  | System Engineer [40 h]; Project Manager [40 h] | 13,400 | 4,520 |
| OZ1030 |  | Identify Supplier Components |  | 2d | 2024-12-18 | 2024-12-19 | OZ1020 |  |  |  |  | 2024-12-20 | 2024-12-23 | 2d |  |  | Purchasing Officer [16 h] | 1,120 |  |
| OZ1040 |  | Validate Technical Specification |  | 2d | 2024-12-20 | 2024-12-23 | OZ1030 |  |  |  |  | 2024-12-24 | 2024-12-27 | 2d |  |  | Project Manager [16 h]; System Engineer [16 h] | 3,360 |  |
|  | 2 | **Delivery Plan** |  |  | 2024-12-24 | 2025-01-21 |  |  |  |  |  |  |  |  |  |  |  |  |  |
| OZ1050 |  | Document Delivery Methodology |  | 4d | 2024-12-24 | 2024-12-31 | OZ1040 |  |  |  |  | 2024-12-30 | 2025-01-03 | 4d |  |  | Project Manager [32 h] | 3,840 |  |
| OZ1060 |  | Obtain Quotes from Suppliers |  | 8d | 2025-01-02 | 2025-01-13 | OZ1030 |  |  |  |  | 2025-01-02 | 2025-01-13 | 8d | start on or after 2025-01-02 |  | Purchasing Officer [64 h]; Project Manager [64 h] | 12,160 |  |
| OZ1070 |  | Calculate the Bid Estimate |  | 3d | 2025-01-14 | 2025-01-16 | OZ1050, OZ1060 |  |  |  |  | 2025-01-14 | 2025-01-16 | 3d |  | OzBuild 6d/w | Project Support [24 h] | 1,920 |  |
| OZ1080 |  | Create the Project Schedule |  | 3d | 2025-01-17 | 2025-01-20 | OZ1070 |  |  |  |  | 2025-01-17 | 2025-01-20 | 3d |  | OzBuild 6d/w | Project Support [24 h] | 1,920 |  |
| OZ1090 |  | Review the Delivery Plan |  | 1d | 2025-01-21 | 2025-01-21 | OZ1080 |  |  |  |  | 2025-01-21 | 2025-01-21 | 1d |  |  | System Engineer [8 h]; Project Manager [8 h] | 1,680 |  |
|  | 3 | **Bid Document** |  |  | 2025-01-02 | 2025-01-27 |  |  |  |  |  |  |  |  |  |  |  |  |  |
| OZ1100 |  | Create Draft of Bid Document |  | 6d | 2025-01-02 | 2025-01-09 | OZ1050 |  |  |  |  | 2025-01-06 | 2025-01-13 | 6d |  |  | Clerical Support [48 h]; Project Manager [48 h] | 8,160 |  |
| OZ1110 |  | Review Bid Document |  | 2d | 2025-01-22 | 2025-01-23 | OZ1090, OZ1100 |  |  |  |  | 2025-01-22 | 2025-01-23 | 2d |  |  | System Engineer [16 h]; Project Manager [16 h] | 3,360 |  |
| OZ1120 |  | Finalise and Submit Bid Document |  | 2d | 2025-01-24 | 2025-01-27 | OZ1110 |  |  |  |  | 2025-01-24 | 2025-01-27 | 2d |  |  | Report Binding [3]; Project Manager [16 h] | 2,220 |  |
| OZ1130 |  | Bid Document Submitted | milestone | 0d | 2025-01-27 | 2025-01-27 | OZ1120 |  |  |  |  | 2025-01-27 | 2025-01-27 | 0d | finish on or before 2025-01-27 |  |  |  |  |

Notes:
- OZ1020: Expenses: Specialists Consultant
- OZ1060: ï»¿ / Due to the proximity of Christmas management has requested that the quotes / are obtained after New Year to gain better pricing.

# Bid for Facility Extension

Schedule from Primavera P6, 2024-12-10 to 2025-01-27, data date 2024-12-16, baseline: Bid for Facility Extension - Original Baseline - B5, A marks actual dates.
ï»¿ / RFQ will not be available prior to 09 December 2024.

## Calendars

- OzBuild 5d/w: Mon-Fri 08:00-15:59; Sat-Sun off. Exceptions (off unless hours are given): 2024-12-25 to 2024-12-26, 2025-01-01.
- OzBuild 6d/w: Mon-Sat 08:00-15:59; Sun off. Exceptions (off unless hours are given): 2024-12-25 to 2024-12-26, 2025-01-01.

## Resources

| Resource | Group | Rate |
| --- | --- | --- |
| Project Manager | labor | 120 |
| System Engineer | labor | 90 |
| Purchasing Officer | labor | 70 |
| Project Support | labor | 80 |
| Clerical Support | labor | 50 |
| Report Binding | material | 100 |

## Schedule

| ID | WBS | Activity | Type | Duration | Start | Finish | Predecessors | Complete | Remaining | Planned start | Planned finish | Baseline start | Baseline finish | Baseline duration | Constraint | Calendar | Resources | Cost | Actual cost | OzBuild Department |
| --- | --- | --- | --- | --- | --- | --- | --- | --- | --- | --- | --- | --- | --- | --- | --- | --- | --- | --- | --- | --- |
|  | 1 | **Technical Specification** |  |  | 2024-12-10 | 2024-12-23 |  |  |  |  |  |  |  |  |  |  |  |  |  |  |
| OZ1000 |  | Approval to Bid | milestone | 0d | 2024-12-10 A | 2024-12-10 A |  | 100% |  | 2024-12-09 | 2024-12-09 | 2024-12-09 | 2024-12-09 | 0d |  |  |  |  |  | OZD |
| OZ1010 |  | Determine Installation Requirements |  | 4d | 2024-12-10 A | 2024-12-12 A | OZ1000 | 100% |  | 2024-12-09 | 2024-12-12 | 2024-12-09 | 2024-12-12 | 4d |  |  | Project Manager [32 h]; System Engineer [32 h] | 6,720 | 6,720 | EN |
| OZ1020 |  | Create Technical Specification |  | 5d | 2024-12-12 A | 2024-12-17 | OZ1010 | 40% | 2d | 2024-12-13 | 2024-12-19 | 2024-12-13 | 2024-12-19 | 5d |  |  | System Engineer [40 h]; Project Manager [40 h] | 13,400 | 7,040 | EN |
| OZ1030 |  | Identify Supplier Components |  | 2d | 2024-12-18 | 2024-12-19 | OZ1020 |  |  |  |  | 2024-12-20 | 2024-12-23 | 2d |  |  | Purchasing Officer [16 h] | 1,120 |  | PR |
| OZ1040 |  | Validate Technical Specification |  | 2d | 2024-12-20 | 2024-12-23 | OZ1030 |  |  |  |  | 2024-12-24 | 2024-12-27 | 2d |  |  | Project Manager [16 h]; System Engineer [16 h] | 3,360 |  | PS |
|  | 2 | **Delivery Plan** |  |  | 2024-12-24 | 2025-01-21 |  |  |  |  |  |  |  |  |  |  |  |  |  |  |
| OZ1050 |  | Document Delivery Methodology |  | 4d | 2024-12-24 | 2024-12-31 | OZ1040 |  |  |  |  | 2024-12-30 | 2025-01-03 | 4d |  |  | Project Manager [32 h] | 3,840 |  | EN |
| OZ1060 |  | Obtain Quotes from Suppliers |  | 8d | 2025-01-02 | 2025-01-13 | OZ1030 |  |  |  |  | 2025-01-02 | 2025-01-13 | 8d | start on or after 2025-01-02 |  | Purchasing Officer [64 h]; Project Manager [64 h] | 12,160 |  | PR |
| OZ1070 |  | Calculate the Bid Estimate |  | 3d | 2025-01-14 | 2025-01-16 | OZ1050, OZ1060 |  |  |  |  | 2025-01-14 | 2025-01-16 | 3d |  | OzBuild 6d/w | Project Support [24 h] | 1,920 |  | PR |
| OZ1080 |  | Create the Project Schedule |  | 3d | 2025-01-17 | 2025-01-20 | OZ1070 |  |  |  |  | 2025-01-17 | 2025-01-20 | 3d |  | OzBuild 6d/w | Project Support [24 h] | 1,920 |  | PS |
| OZ1090 |  | Review the Delivery Plan |  | 1d | 2025-01-21 | 2025-01-21 | OZ1080 |  |  |  |  | 2025-01-21 | 2025-01-21 | 1d |  |  | System Engineer [8 h]; Project Manager [8 h] | 1,680 |  | PS |
|  | 3 | **Bid Document** |  |  | 2025-01-02 | 2025-01-27 |  |  |  |  |  |  |  |  |  |  |  |  |  |  |
| OZ1100 |  | Create Draft of Bid Document |  | 6d | 2025-01-02 | 2025-01-09 | OZ1050 |  |  |  |  | 2025-01-06 | 2025-01-13 | 6d |  |  | Clerical Support [48 h]; Project Manager [48 h] | 8,160 |  | PS |
| OZ1110 |  | Review Bid Document |  | 2d | 2025-01-22 | 2025-01-23 | OZ1090, OZ1100 |  |  |  |  | 2025-01-22 | 2025-01-23 | 2d |  |  | System Engineer [16 h]; Project Manager [16 h] | 3,360 |  | PS |
| OZ1120 |  | Finalise and Submit Bid Document |  | 2d | 2025-01-24 | 2025-01-27 | OZ1110 |  |  |  |  | 2025-01-24 | 2025-01-27 | 2d |  |  | Report Binding [3]; Project Manager [16 h] | 2,220 |  | PS |
| OZ1130 |  | Bid Document Submitted | milestone | 0d | 2025-01-27 | 2025-01-27 | OZ1120 |  |  |  |  | 2025-01-27 | 2025-01-27 | 0d | finish on or before 2025-01-27 |  |  |  |  | OZD |

Notes:
- OZ1020: Expenses: Specialists Consultant
- OZ1060: ï»¿ / Due to the proximity of Christmas management has requested that the quotes / are obtained after New Year to gain better pricing.

## Activity codes

| Code | Value | Meaning |
| --- | --- | --- |
| OzBuild Department | EN | Engineering |
| OzBuild Department | OZD | OzBuild Department |
| OzBuild Department | PR | Procurement |
| OzBuild Department | PS | Project Support |

# Bid for Facility Extension

Schedule from Primavera P6, 2024-12-10 to 2025-02-14, data date 2024-12-16, baseline: Bid for Facility Extension - Original Baseline - B6, A marks actual dates.
ï»¿ / RFQ will not be available prior to 09 December 2024.

## Calendars

- OzBuild 5d/w: Mon-Fri 08:00-15:59; Sat-Sun off. Exceptions (off unless hours are given): 2024-12-25 to 2024-12-26, 2025-01-01.
- OzBuild 6d/w: Mon-Sat 08:00-15:59; Sun off. Exceptions (off unless hours are given): 2024-12-25 to 2024-12-26, 2025-01-01.

## Resources

| Resource | Group | Rate |
| --- | --- | --- |
| Project Manager | labor | 120 |
| System Engineer | labor | 90 |
| Purchasing Officer | labor | 70 |
| Project Support | labor | 80 |
| Clerical Support | labor | 50 |
| Report Binding | material | 100 |

## Schedule

| ID | WBS | Activity | Type | Duration | Start | Finish | Predecessors | Complete | Remaining | Planned start | Planned finish | Baseline start | Baseline finish | Baseline duration | Constraint | Calendar | Resources | Cost | Actual cost | OzBuild Department |
| --- | --- | --- | --- | --- | --- | --- | --- | --- | --- | --- | --- | --- | --- | --- | --- | --- | --- | --- | --- | --- |
|  | 1 | **Technical Specification** |  |  | 2024-12-10 | 2024-12-23 |  |  |  |  |  |  |  |  |  |  |  |  |  |  |
| OZ1000 |  | Approval to Bid | milestone | 0d | 2024-12-10 A | 2024-12-10 A |  | 100% |  | 2024-12-09 | 2024-12-09 | 2024-12-09 | 2024-12-09 | 0d |  |  |  |  |  | OZD |
| OZ1010 |  | Determine Installation Requirements |  | 4d | 2024-12-10 A | 2024-12-12 A | OZ1000 | 100% |  | 2024-12-09 | 2024-12-12 | 2024-12-09 | 2024-12-12 | 4d |  |  | Project Manager [32 h]; System Engineer [32 h] | 6,720 | 6,720 | EN |
| OZ1020 |  | Create Technical Specification |  | 5d | 2024-12-12 A | 2024-12-17 | OZ1010 | 40% | 2d | 2024-12-13 | 2024-12-19 | 2024-12-13 | 2024-12-19 | 5d |  |  | System Engineer [40 h]; Project Manager [40 h] | 13,400 | 4,520 | EN |
| OZ1030 |  | Identify Supplier Components |  | 2d | 2024-12-18 | 2024-12-19 | OZ1020 |  |  |  |  | 2024-12-20 | 2024-12-23 | 2d |  |  | Purchasing Officer [16 h] | 1,120 |  | PR |
| OZ1040 |  | Validate Technical Specification |  | 2d | 2024-12-20 | 2024-12-23 | OZ1030 |  |  |  |  | 2024-12-24 | 2024-12-27 | 2d |  |  | Project Manager [16 h]; System Engineer [16 h] | 3,360 |  | PS |
|  | 2 | **Delivery Plan** |  |  | 2024-12-24 | 2025-02-10 |  |  |  |  |  |  |  |  |  |  |  |  |  |  |
| OZ1050 |  | Document Delivery Methodology |  | 8d | 2024-12-24 | 2025-01-07 | OZ1040 |  |  |  |  | 2024-12-30 | 2025-01-03 | 4d |  |  | Project Manager [32 h] | 3,840 |  | EN |
| OZ1060 |  | Obtain Quotes from Suppliers |  | 16d | 2025-01-02 | 2025-01-23 | OZ1030 |  |  |  |  | 2025-01-02 | 2025-01-13 | 8d | start on or after 2025-01-02 |  | Purchasing Officer [64 h]; Project Manager [64 h] | 12,160 |  | PR |
| OZ1070 |  | Calculate the Bid Estimate |  | 6d | 2025-01-24 | 2025-01-30 | OZ1050, OZ1060 |  |  |  |  | 2025-01-14 | 2025-01-16 | 3d |  | OzBuild 6d/w | Project Support [24 h] | 1,920 |  | PR |
| OZ1080 |  | Create the Project Schedule |  | 6d | 2025-01-31 | 2025-02-06 | OZ1070 |  |  |  |  | 2025-01-17 | 2025-01-20 | 3d |  | OzBuild 6d/w | Project Support [24 h] | 1,920 |  | PS |
| OZ1090 |  | Review the Delivery Plan |  | 2d | 2025-02-07 | 2025-02-10 | OZ1080 |  |  |  |  | 2025-01-21 | 2025-01-21 | 1d |  |  | System Engineer [8 h]; Project Manager [8 h] | 1,680 |  | PS |
|  | 3 | **Bid Document** |  |  | 2025-01-08 | 2025-02-14 |  |  |  |  |  |  |  |  |  |  |  |  |  |  |
| OZ1100 |  | Create Draft of Bid Document |  | 6d | 2025-01-08 | 2025-01-15 | OZ1050 |  |  |  |  | 2025-01-06 | 2025-01-13 | 6d |  |  | Clerical Support [48 h]; Project Manager [48 h] | 8,160 |  | PS |
| OZ1110 |  | Review Bid Document |  | 2d | 2025-02-11 | 2025-02-12 | OZ1090, OZ1100 |  |  |  |  | 2025-01-22 | 2025-01-23 | 2d |  |  | System Engineer [16 h]; Project Manager [16 h] | 3,360 |  | PS |
| OZ1120 |  | Finalise and Submit Bid Document |  | 2d | 2025-02-13 | 2025-02-14 | OZ1110 |  |  |  |  | 2025-01-24 | 2025-01-27 | 2d |  |  | Report Binding [3]; Project Manager [16 h] | 2,220 |  | PS |
| OZ1130 |  | Bid Document Submitted | milestone | 0d | 2025-02-14 | 2025-02-14 | OZ1120 |  |  |  |  | 2025-01-27 | 2025-01-27 | 0d | finish on or before 2025-01-27 |  |  |  |  | OZD |

Notes:
- OZ1020: Expenses: Specialists Consultant
- OZ1060: ï»¿ / Due to the proximity of Christmas management has requested that the quotes / are obtained after New Year to gain better pricing.

## Activity codes

| Code | Value | Meaning |
| --- | --- | --- |
| OzBuild Department | EN | Engineering |
| OzBuild Department | OZD | OzBuild Department |
| OzBuild Department | PR | Procurement |
| OzBuild Department | PS | Project Support |
